# 项目进度表模板

Schedule from MS Project, 2004-05-10 to 2004-08-20, costs in ￥, A marks actual dates.
CAP/EPG-MB-PP-2007-003

## Calendars

- 标准: Mon-Fri 08:00-12:00, 13:00-17:00; Sat-Sun off.

## Resources

| Resource | Rate | Cost per use |
| --- | --- | --- |
| 设计人员 | 1 | 1 |
| 测试人员 | 1 | 1 |
| 外部专家 | 1 | 1 |
| 编码人员 | 1 | 1 |
| 项目经理 | 1 |  |
| QA | 1 |  |
| 专家 | 1 |  |
| CM | 1 |  |
| 测试负责人 | 1 |  |
| 需求人员 | 1 |  |
| CCB | 1 |  |
| SM | 1 |  |
| 项目组 | 1 |  |
| 集成人员 | 1 |  |

## Schedule

| ID | WBS | Task | Duration | Start | Finish | Predecessors | Complete | Baseline start | Baseline finish | Baseline duration | Resources | Work | Actual work | Cost | Baseline cost | Actual cost | Text5 | Text8 | Text21 | Text22 |
| --- | --- | --- | --- | --- | --- | --- | --- | --- | --- | --- | --- | --- | --- | --- | --- | --- | --- | --- | --- | --- |
| 1 | 1 | **项目总体任务** | 75d? | 2004-05-10 A | 2004-08-20 A |  | 100% | 2004-05-10 | 2004-08-13 | 69.27d? |  | 1498h | 1498h | 1,517.5 | 1,453.5 | 1,517.5 |  |  |  |  |
| 2 | 1.1 | **项目策划** | 46.38d? | 2004-05-10 A | 2004-07-13 A |  | 100% | 2004-05-10 | 2004-07-13 | 46.04d? |  | 273h | 273h | 261.5 | 245.5 | 261.5 |  |  |  |  |
| 3 | 1.1.1 | 项目立项 | 1.75d | 2004-05-21 A | 2004-05-24 A |  | 100% | 2004-05-21 | 2004-05-24 | 0.5d | 项目经理 | 4h | 4h | 3.5 | 3.5 | 3.5 | A项目参考 | 需要中心批准 | 立项报告 | A项目参考 |
| 4 | 1.1.2 | 定义需求开发过程 | 0.88d? | 2004-05-10 A | 2004-05-11 A | 3 | 100% | 2004-05-10 | 2004-05-11 | 0.88d? | 项目经理 | 7h | 7h | 7 | 7 | 7 |  | 本项目需求开发超过2周。 | 需求开发计划 |  |
| 5 | 1.1.3 | 制订需求开发计划 | 1d? | 2004-05-11 A | 2004-05-12 A | 4 | 100% | 2004-05-11 | 2004-05-12 | 1d? | 项目经理 | 8h | 8h | 7 | 7 | 7 |  | 本项目需求开发超过2周，需要制定计划 | 需求开发计划 |  |
| 6 | 1.1.4 | 项目团队建立 | 2.5d? | 2004-05-12 A | 2004-05-14 A | 3 | 100% | 2004-05-12 | 2004-05-14 | 2.5d? | 项目经理 | 20h | 20h | 20 | 20 | 20 |  | 初期只建立RM人员 | SDP |  |
| 7 | 1.1.5 | 项目策划培训 | 1d? | 2004-05-17 A | 2004-05-17 A | 6 | 100% | 2004-05-17 | 2004-05-17 | 1d? |  | 10h | 10h |  |  |  |  |  |  |  |
| 8 | 1.1.6 | 项目软件生命周期模型选择 | 3d? | 2004-05-18 A | 2004-05-20 A | 7 | 100% | 2004-05-18 | 2004-05-20 | 1.5d? | 项目经理; QA | 16h | 16h | 16 | 16 | 16 |  | 本项目选择瀑布型 | SDP |  |
| 9 | 1.1.7 | 定义项目的软件过程 | 1.33d? | 2004-05-27 A | 2004-05-28 A | 34 | 100% | 2004-05-27 | 2004-05-28 | 1d? | 项目经理; QA | 16h | 16h | 16 | 16 | 16 |  | 本项目按照研发项目定义，项目任务紧，团队能力高 | 项目软件过程定义 |  |
| 10 | 1.1.8 | 技术任务WBS拆分 | 1.33d? | 2004-05-28 A | 2004-06-01 A | 9 | 100% | 2004-05-28 | 2004-06-01 | 1d? | 项目经理 | 8h | 8h | 8 | 8 | 8 |  |  | WBS |  |
| 11 | 1.1.9 | 管理任务WBS拆分 | 2d? | 2004-06-01 A | 2004-06-03 A | 10 | 100% | 2004-06-01 | 2004-06-03 | 1d? | 项目经理 | 8h | 8h | 8 | 8 | 8 |  |  | WBS |  |
| 12 | 1.1.10 | 制定估计策略 | 1.75d? | 2004-06-03 A | 2004-06-04 A | 11 | 100% | 2004-06-03 | 2004-06-04 | 1d? | 项目经理 | 8h | 8h | 8 | 8 | 8 |  | 工作量是工时。 | SDP |  |
| 13 | 1.1.11 | 技术任务规模估计 | 0.75d? | 2004-06-04 A | 2004-06-04 A | 12 | 100% | 2004-06-04 | 2004-06-04 | 0.33d? | 项目经理; QA; 专家 | 8h | 8h | 8 | 8 | 8 |  | 维护类可以不估计 | 估计表 |  |
| 14 | 1.1.12 | 技术任务工作量估计 | 2.41d? | 2004-06-04 A | 2004-06-08 A | 13 | 100% | 2004-06-04 | 2004-06-08 | 1.59d? | 项目经理; QA; 专家 | 24h | 24h | 24 | 24 | 24 |  |  | 估计表 |  |
| 15 | 1.1.13 | 关键计算机资源估计 | 1.16d? | 2004-06-08 A | 2004-06-09 A | 14 | 100% | 2004-06-08 | 2004-06-09 | 1d? | 项目经理; QA | 16h | 16h | 16 | 16 | 16 |  |  |  |  |
| 16 | 1.1.14 | 工程设备和支持工具估计 | 1.16d? | 2004-06-09 A | 2004-06-10 A | 15 | 100% | 2004-06-09 | 2004-06-10 | 1d? | 项目经理; QA | 16h | 16h | 16 | 16 | 16 |  |  |  |  |
| 17 | 1.1.15 | 制定风险管理计划 | 1.91d? | 2004-06-10 A | 2004-06-15 A | 16 | 100% | 2004-06-10 | 2004-06-15 | 1d? | 项目经理 | 8h | 8h | 8 | 8 | 8 |  |  | 风险管理计划 |  |
| 18 | 1.1.16 | 制定同行评审计划 | 1.66d? | 2004-06-15 A | 2004-06-17 A | 17 | 100% | 2004-06-15 | 2004-06-17 | 1d? | 项目经理 | 8h | 8h | 8 | 8 | 8 |  |  | SDP |  |
| 19 | 1.1.17 | 制定培训计划 | 1.29d? | 2004-06-17 A | 2004-06-18 A | 18 | 100% | 2004-06-17 | 2004-06-18 | 1d? | 项目经理 | 8h | 8h | 8 | 8 | 8 |  | 主要进行CMM3过程内容的培训。 | 培训计划 |  |
| 20 | 1.1.18 | 采购计划 | 1.29d? | 2004-06-18 A | 2004-06-21 A | 19 | 100% |  |  |  | 项目经理 | 8h | 8h | 8 |  | 8 |  |  |  |  |
| 21 | 1.1.19 | 外包计划 | 1.29d? | 2004-06-21 A | 2004-06-22 A | 20 | 100% |  |  |  | 项目经理 | 8h | 8h | 8 |  | 8 |  |  |  |  |
| 22 | 1.1.20 | 明细任务日程安排 | 1.29d? | 2004-06-22 A | 2004-06-23 A | 21 | 100% | 2004-06-18 | 2004-06-22 | 1d? | 项目经理 | 8h | 8h | 8 | 8 | 8 |  |  | 软件估计书 |  |
| 23 | 1.1.21 | 制定配置管理计划 | 1.29d? | 2004-06-23 A | 2004-06-24 A | 22 | 100% | 2004-06-22 | 2004-06-23 | 1d? | CM | 8h | 8h | 8 | 8 | 8 |  |  | 配置管理计划 |  |
| 24 | 1.1.22 | 制定测试计划 | 1.29d? | 2004-06-24 A | 2004-06-25 A | 23 | 100% | 2004-06-23 | 2004-06-24 | 1d? | 测试负责人 | 8h | 8h | 8 | 8 | 8 |  |  | 软件测试计划 |  |
| 25 | 1.1.23 | 制定质量保证计划 | 1.29d? | 2004-06-25 A | 2004-06-28 A | 24 | 100% | 2004-06-24 | 2004-06-25 | 1d? | QA | 8h | 8h | 8 | 8 | 8 |  |  | 软件质量保证计划 |  |
| 26 | 1.1.24 | 制定项目度量收集计划 | 1.49d? | 2004-06-28 A | 2004-07-08 A | 25 | 100% | 2004-06-25 | 2004-07-07 | 1d? | 项目经理 | 8h | 8h | 8 | 8 | 8 |  |  | 项目级软件度量收集计划 |  |
| 27 | 1.1.25 | 制定组间协调计划 | 1.49d? | 2004-07-08 A | 2004-07-09 A | 26 | 100% | 2004-07-07 | 2004-07-08 | 1d? | 项目经理 | 8h | 8h | 8 | 8 | 8 |  |  | 组间协调计划 |  |
| 28 | 1.1.26 | 计划评审 | 1d? | 2004-07-12 A | 2004-07-12 A | 27 | 100% | 2004-07-09 | 2004-07-12 | 1d? | 项目经理 | 8h | 8h | 8 | 8 | 8 |  | 中心正式评审，中心批准。 | 评审准备表和报告 |  |
| 29 | 1.1.27 | 计划返工 | 1d? | 2004-07-13 A | 2004-07-13 A | 28 | 100% | 2004-07-12 | 2004-07-13 | 1d? | 项目经理 | 8h | 8h | 8 | 8 | 8 |  |  |  |  |

Notes:
- 1: WBS活动的裁剪，按照缺省原则执行。
- 7: 培训内容与参加的人数有关，注意工时的估计

| ID | WBS | Task | Duration | Start | Finish | Predecessors | Complete | Baseline start | Baseline finish | Baseline duration | Deadline | Resources | Work | Actual work | Cost | Baseline cost | Actual cost | Text8 | Text21 | Text29 | Text3 | Text28 |
| --- | --- | --- | --- | --- | --- | --- | --- | --- | --- | --- | --- | --- | --- | --- | --- | --- | --- | --- | --- | --- | --- | --- |
| 30 | 1.2 | **需求阶段任务** | 14d? | 2004-05-10 A | 2004-05-27 A |  | 100% | 2004-05-10 | 2004-05-27 | 13.88d? |  |  | 111h | 111h | 109 | 109 | 109 |  |  |  |  |  |
| 31 | 1.2.1 | 需求收集活动 | 16h | 2004-05-12 A | 2004-05-13 A | 5 | 100% | 2004-05-12 | 2004-05-13 | 10h |  | 需求人员 | 10h | 10h | 10 | 10 | 10 | 客户需求调研 | 客户需求说明书 | ܁! |  |  |
| 32 | 1.2.2 | 需求分析活动 | 6d? | 2004-05-13 A | 2004-05-20 A | 31 | 100% | 2004-05-13 | 2004-05-20 | 5d? |  | 需求人员 | 40h | 40h | 38 | 38 | 38 |  | 软件需求规格说明书 | ܁! |  |  |
| 33 | 1.2.3 | 需求同行评审 | 6d? | 2004-05-20 A | 2004-05-27 A | 32 | 100% | 2004-05-20 | 2004-05-27 | 4.38d? | 2004-07-06 | CCB | 35h | 35h | 35 | 35 | 35 |  | 评审准备表和报告 |  | 10 | 10 |
| 34 | 1.2.4 | 需求问题返工 | 0.83d? | 2004-05-27 A | 2004-05-27 A | 33 | 100% | 2004-05-27 | 2004-05-27 | 0.38d? |  | 需求人员 | 3h | 3h | 3 | 3 | 3 |  |  |  |  |  |
| 35 | 1.2.5 | 需求功能矩阵建立 | 1d? | 2004-05-27 A | 2004-05-27 A | 33 | 100% | 2004-05-27 | 2004-05-27 | 0.88d? |  | 需求人员 | 7h | 7h | 7 | 7 | 7 | 维护类可以只建立需求和测试之间的矩阵。 | 需求功能矩阵表和变更表 |  |  |  |
| 36 | 1.2.6 | 需求阶段度量数据收集 | 1.12d? | 2004-05-10 A | 2004-05-18 A |  | 100% | 2004-05-10 | 2004-05-18 | 1d? |  | 项目经理 | 8h | 8h | 8 | 8 | 8 |  | 度量收集计划 | ܁$ |  |  |
| 37 | 1.2.7 | 需求里程碑报告 | 2d? | 2004-05-21 A | 2004-05-24 A |  | 100% | 2004-05-21 | 2004-05-24 | 1d? |  | 项目经理 | 8h | 8h | 8 | 8 | 8 | 本项目不进行 | 项目阶段报告 |  |  |  |
| 38 | 1.3 | **设计阶段任务** | 46d? | 2004-05-10 A | 2004-07-12 A |  | 100% | 2004-05-10 | 2004-07-12 | 45.79d? |  |  | 301h | 301h | 316 | 298 | 316 |  |  |  |  |  |
| 39 | 1.3.1 | 需求培训 | 1d? | 2004-05-10 A | 2004-05-10 A |  | 100% | 2004-05-10 | 2004-05-10 | 1d? |  | 需求人员 | 8h | 8h | 8 | 8 | 8 |  | 培训记录 |  |  |  |
| 40 | 1.3.2 | 系统测试用例设计 | 3d? | 2004-05-21 A | 2004-05-25 A | 32 | 100% | 2004-05-20 | 2004-05-25 | 2.5d? |  | 测试负责人 | 20h | 20h | 20 | 20 | 20 |  | 系统测试用例 | ܁ |  |  |
| 41 | 1.3.3 | 系统测试方案编写 | 2d? | 2004-05-21 A | 2004-05-24 A | 32 | 100% | 2004-05-20 | 2004-05-21 | 1.25d? |  | 测试负责人 | 10h | 10h | 10 | 10 | 10 |  | 系统测试方案 | ܁ |  |  |
| 42 | 1.3.4 | 系统测试用例同行评审 | 2d? | 2004-05-25 A | 2004-05-26 A | 40 | 100% | 2004-05-25 | 2004-05-26 | 1d? |  | 测试负责人; 项目经理 | 16h | 16h | 16 | 16 | 16 |  | 评审准备表和报告 |  |  |  |
| 43 | 1.3.5 | 系统测试用例返工 | 2d? | 2004-05-26 A | 2004-05-27 A | 42 | 100% | 2004-05-26 | 2004-05-27 | 1d? |  | 测试人员 | 8h | 8h | 9 | 9 | 9 |  |  |  |  |  |
| 44 | 1.3.6 | 概要设计1任务 | 2d? | 2004-05-21 A | 2004-05-24 A | 32 | 100% | 2004-05-20 | 2004-05-21 | 1.25d? |  | 设计人员; 测试人员 | 20h | 20h | 22 | 22 | 22 |  | 概要设计说明书 | ܁" | 20 | 20 |
| 45 | 1.3.7 | 概要设计2任务 | 5d? | 2004-05-24 A | 2004-05-28 A | 44 | 100% | 2004-05-24 | 2004-05-28 | 1.25d? |  | 外部专家; 编码人员 | 10h | 10h | 12 | 12 | 12 |  |  | ܁" | 23 | 23 |
| 46 | 1.3.8 | 概要设计同行评审 | 1d? | 2004-05-28 A | 2004-05-28 A | 45 | 100% | 2004-05-28 | 2004-05-28 | 0.5d? |  | 设计人员; 项目经理 | 8h | 8h | 9 | 9 | 9 |  | 评审准备表和报告 |  |  |  |
| 47 | 1.3.9 | 概要设计返工 | 2d? | 2004-05-28 A | 2004-05-31 A | 46 | 100% | 2004-05-28 | 2004-05-31 | 1d? |  | 设计人员 | 8h | 8h | 9 | 9 | 9 |  |  |  |  |  |
| 48 | 1.3.10 | 接口设计 | 2d? | 2004-05-31 A | 2004-06-01 A | 47 | 100% |  |  |  |  | 设计人员 | 8h | 8h | 9 |  | 9 |  |  | ܁" |  |  |
| 49 | 1.3.11 | 接口设计评审 | 2d? | 2004-06-01 A | 2004-06-02 A | 48 | 100% |  |  |  |  | 设计人员; 项目经理 | 8h | 8h | 9 |  | 9 |  |  |  |  |  |
| 50 | 1.3.12 | 集成测试用例设计 | 3d? | 2004-06-02 A | 2004-06-04 A | 49 | 100% | 2004-05-31 | 2004-06-02 | 1.88d? |  | 测试人员 | 15h | 15h | 16 | 16 | 16 |  | 测试用例 | ܁ |  |  |
| 51 | 1.3.13 | 集成测试用例项目评审 | 1d? | 2004-06-04 A | 2004-06-04 A | 50 | 100% | 2004-06-02 | 2004-06-02 | 0.33d? |  | 测试人员; 测试负责人; 项目经理 | 8h | 8h | 9 | 9 | 9 |  | 评审准备表和报告 |  |  |  |
| 52 | 1.3.14 | 集成测试用例返工 | 2d? | 2004-06-04 A | 2004-06-07 A | 51 | 100% | 2004-06-02 | 2004-06-03 | 1d? |  | 测试人员 | 8h | 8h | 9 | 9 | 9 |  |  |  |  |  |
| 53 | 1.3.15 | 详细设计1任务 | 4d? | 2004-06-07 A | 2004-06-10 A | 52 | 100% | 2004-06-03 | 2004-06-08 | 2.5d? |  | 设计人员 | 20h | 20h | 21 | 21 | 21 |  | 详细设计说明书 | ܁" | 60 | 60 |
| 54 | 1.3.16 | 详细设计2任务 | 4d? | 2004-06-10 A | 2004-06-15 A | 53 | 100% | 2004-06-08 | 2004-06-14 | 3.75d? |  | 设计人员 | 30h | 30h | 31 | 31 | 31 |  |  | ܁" | 68 | 68 |
| 55 | 1.3.17 | 详细设计走查 | 1d? | 2004-06-14 A | 2004-06-17 A | 52, 53 | 100% | 2004-06-11 | 2004-06-17 | 1d? |  | 项目经理 | 8h | 8h | 8 | 8 | 8 |  |  |  |  |  |
| 56 | 1.3.18 | 详细设计返工 | 1d? | 2004-06-18 A | 2004-06-18 A | 55 | 100% | 2004-06-17 | 2004-06-18 | 1d? |  | 设计人员 | 8h | 8h | 9 | 9 | 9 |  |  |  |  |  |
| 57 | 1.3.19 | 设计阶段需求功能矩阵跟踪 | 1d? | 2004-06-21 A | 2004-06-21 A | 56 | 100% | 2004-06-18 | 2004-06-21 | 1d? |  | 需求人员 | 8h | 8h | 8 | 8 | 8 |  | 需求功能矩阵变更表 |  |  |  |
| 58 | 1.3.20 | 设计阶段度量数据收集 | 1d? | 2004-07-12 A | 2004-07-12 A | 57 | 100% | 2004-07-09 | 2004-07-12 | 1d? |  | 项目经理 | 8h | 8h | 8 | 8 | 8 |  | 度量收集计划 | ܁$ |  |  |
| 59 | 1.3.21 | 用户操作手册编写 | 1.75d? | 2004-05-20 A | 2004-05-21 A | 39 | 100% | 2004-05-20 | 2004-05-21 | 1d? |  | 项目经理 | 8h | 8h | 8 | 8 | 8 |  | 操作手册 | ܁" |  |  |
| 60 | 1.3.22 | 用户安装手册编写 | 2d? | 2004-06-04 A | 2004-06-08 A | 47 | 100% | 2004-06-04 | 2004-06-08 | 1d? |  | 项目经理 | 8h | 8h | 8 | 8 | 8 |  | 安装手册 | ܁" |  |  |
| 61 | 1.3.23 | 用户维护手册编写 | 2.29d? | 2004-06-21 A | 2004-06-24 A | 56 | 100% | 2004-06-18 | 2004-06-23 | 1d? |  | 项目经理 | 8h | 8h | 8 | 8 | 8 |  | 维护手册 | ܁" |  |  |
| 62 | 1.3.24 | 设计里程碑报告 | 6.33d? | 2004-06-21 A | 2004-07-02 A | 56 | 100% | 2004-06-18 | 2004-07-01 | 5d? |  | 项目经理 | 40h | 40h | 40 | 40 | 40 |  | 里程碑报告 |  |  |  |

| ID | WBS | Task | Duration | Start | Finish | Predecessors | Complete | Baseline start | Baseline finish | Baseline duration | Resources | Work | Actual work | Cost | Baseline cost | Actual cost | Text21 | Text3 | Text28 | Text29 | Text4 | Text27 |
| --- | --- | --- | --- | --- | --- | --- | --- | --- | --- | --- | --- | --- | --- | --- | --- | --- | --- | --- | --- | --- | --- | --- |
| 63 | 1.4 | **编码和单元测试任务** | 26d? | 2004-06-11 A | 2004-07-16 A |  | 100% | 2004-06-08 | 2004-07-15 | 26.87d? |  | 290h | 290h | 300 | 268 | 300 |  |  |  |  |  |  |
| 64 | 1.4.1 | 设计培训 | 1d? | 2004-06-21 A | 2004-06-21 A | 56 | 100% | 2004-06-18 | 2004-06-21 | 1d? | 设计人员 | 8h | 8h | 9 | 9 | 9 | 培训记录 |  |  |  |  |  |
| 65 | 1.4.2 | 编码培训 | 2d? | 2004-07-15 A | 2004-07-16 A | 64 | 100% | 2004-07-14 | 2004-07-15 | 1d? | 项目经理 | 8h | 8h | 8 | 8 | 8 | 培训记录 |  |  |  |  |  |
| 66 | 1.4.3 | 单元测试用例设计 | 4d? | 2004-06-25 A | 2004-06-30 A | 53, 61 | 100% | 2004-06-23 | 2004-06-29 | 3.75d? | 测试人员 | 30h | 30h | 31 | 31 | 31 | 测试用例 | 100 | 100 | ܁ |  |  |
| 67 | 1.4.4 | 单元测试用例非正式评审 | 2d? | 2004-06-30 A | 2004-07-01 A | 66 | 100% | 2004-06-29 | 2004-06-30 | 1d? | 测试负责人 | 8h | 8h | 8 | 8 | 8 |  |  |  |  |  |  |
| 68 | 1.4.5 | 单元测试用例返工 | 2d? | 2004-07-01 A | 2004-07-02 A | 67 | 100% | 2004-06-30 | 2004-07-01 | 1d? | 测试人员 | 8h | 8h | 9 | 9 | 9 |  |  |  |  |  |  |
| 69 | 1.4.6 | 编码1任务 | 3d? | 2004-06-11 A | 2004-06-15 A | 53 | 100% | 2004-06-08 | 2004-06-10 | 2.5d? | 编码人员 | 20h | 20h | 21 | 21 | 21 | 编码1 | 1000 | 1000 | ܁# | LOC | LOC |
| 70 | 1.4.7 | 编码2任务 | 3d? | 2004-06-15 A | 2004-06-17 A | 69 | 100% | 2004-06-10 | 2004-06-14 | 1.88d? | 编码人员 | 15h | 15h | 16 | 16 | 16 | 编码2 | 700 | 700 | ܁# | LOC | LOC |
| 71 | 1.4.8 | 编码3任务 | 5d? | 2004-06-17 A | 2004-06-23 A | 70 | 100% | 2004-06-14 | 2004-06-18 | 3.75d? | 编码人员 | 30h | 30h | 31 | 31 | 31 | 编码3 | 1300 | 1300 | ܁# | LOC | LOC |
| 72 | 1.4.9 | 编码4任务 | 3d? | 2004-06-23 A | 2004-06-25 A | 71 | 100% | 2004-06-18 | 2004-06-23 | 2.5d? | 编码人员 | 20h | 20h | 21 | 21 | 21 | 编码4 | 1100 | 1100 | ܁# | LOC | LOC |
| 73 | 1.4.10 | 编码走查 | 2.18d? | 2004-06-21 A | 2004-07-09 A | 70 | 100% | 2004-06-18 | 2004-07-08 | 1d? | 项目经理 | 8h | 8h | 8 | 8 | 8 |  |  |  |  |  |  |
| 74 | 1.4.11 | 单元测试1 | 3d? | 2004-06-15 A | 2004-06-17 A | 69 | 100% | 2004-06-10 | 2004-06-15 | 2.5d? | 测试人员 | 20h | 20h | 21 | 21 | 21 | 测试记录 |  |  | ܁ |  |  |
| 75 | 1.4.12 | 单元测试2 | 5d? | 2004-06-18 A | 2004-06-24 A | 74 | 100% | 2004-06-15 | 2004-06-21 | 4.38d? | 测试人员 | 35h | 35h | 36 | 36 | 36 | 测试记录 |  |  | ܁ |  |  |
| 76 | 1.4.13 | 集成任务1 | 2d? | 2004-06-24 A | 2004-06-25 A | 75 | 100% |  |  |  | 集成人员 | 12h | 12h | 12 |  | 12 | 集成报告 |  |  |  |  |  |
| 77 | 1.4.14 | 集成任务2 | 4d? | 2004-06-25 A | 2004-06-30 A | 76 | 100% |  |  |  | 集成人员 | 20h | 20h | 20 |  | 20 | 集成报告 |  |  |  |  |  |
| 78 | 1.4.15 | 用户文档评审 | 2.19d? | 2004-06-30 A | 2004-07-09 A | 77 | 100% | 2004-06-25 | 2004-07-06 | 1d? | 项目经理 | 8h | 8h | 8 | 8 | 8 | 评审准备表和报告 |  |  |  |  |  |
| 79 | 1.4.16 | 用户文档返工 | 1.33d? | 2004-07-09 A | 2004-07-14 A | 78 | 100% | 2004-07-06 | 2004-07-12 | 1d? | 项目经理 | 8h | 8h | 8 | 8 | 8 |  |  |  |  |  |  |
| 80 | 1.4.17 | 单元测试编码返工 | 2d? | 2004-06-24 A | 2004-06-25 A | 74, 75 | 100% | 2004-06-21 | 2004-06-22 | 1d? | 编码人员 | 8h | 8h | 9 | 9 | 9 |  |  |  |  |  |  |
| 81 | 1.4.18 | 需求功能矩阵跟踪 | 2d? | 2004-06-25 A | 2004-06-28 A | 80 | 100% | 2004-06-22 | 2004-06-23 | 1d? | 需求人员 | 8h | 8h | 8 | 8 | 8 | 变更表 |  |  |  |  |  |
| 82 | 1.4.19 | 编码阶段度量数据收集 | 2.12d? | 2004-07-07 A | 2004-07-14 A | 81 | 100% | 2004-07-02 | 2004-07-09 | 1d? | 项目经理 | 8h | 8h | 8 | 8 | 8 | 度量收集计划 |  |  | ܁$ |  |  |
| 83 | 1.4.20 | 编码里程碑报告 | 2d? | 2004-07-14 A | 2004-07-15 A | 82 | 100% | 2004-07-09 | 2004-07-12 | 1d? | 项目经理 | 8h | 8h | 8 | 8 | 8 | 里程碑报告 |  |  |  |  |  |
| 84 | 1.5 | **测试阶段任务** | 22d? | 2004-07-15 A | 2004-08-13 A |  | 100% | 2004-07-12 | 2004-08-06 | 19.5d? |  | 166h | 166h | 172 | 172 | 172 |  |  |  |  |  |  |
| 85 | 1.5.1 | 集成测试培训 | 1d? | 2004-07-15 A | 2004-07-15 A | 79 | 100% | 2004-07-12 | 2004-07-13 | 1d? | 测试负责人 | 8h | 8h | 8 | 8 | 8 | 培训记录 |  |  |  |  |  |
| 86 | 1.5.2 | 集成测试任务 | 7d? | 2004-07-16 A | 2004-07-26 A | 85 | 100% | 2004-07-13 | 2004-07-21 | 6.25d? | 测试人员 | 50h | 50h | 51 | 51 | 51 |  |  |  | ܁ |  |  |
| 87 | 1.5.3 | 集成测试报告编写 | 2d? | 2004-07-26 A | 2004-07-27 A | 86 | 100% | 2004-07-21 | 2004-07-22 | 1.25d? | 测试人员 | 10h | 10h | 11 | 11 | 11 | 集成测试报告 |  |  | ܁ |  |  |
| 88 | 1.5.4 | 集成测试编码返工 | 2d? | 2004-07-26 A | 2004-07-27 A | 86 | 100% | 2004-07-21 | 2004-07-22 | 1d? | 编码人员 | 8h | 8h | 9 | 9 | 9 |  |  |  |  |  |  |
| 89 | 1.5.5 | 系统测试培训 | 2d? | 2004-07-27 A | 2004-07-28 A | 88 | 100% | 2004-07-22 | 2004-07-23 | 1d? | 测试负责人 | 8h | 8h | 8 | 8 | 8 | 培训记录 |  |  |  |  |  |
| 90 | 1.5.6 | 系统测试任务 | 6d? | 2004-07-28 A | 2004-08-04 A | 89 | 100% | 2004-07-23 | 2004-07-30 | 5d? | 测试人员 | 40h | 40h | 41 | 41 | 41 |  |  |  | ܁ |  |  |
| 91 | 1.5.7 | 系统测试报告编写 | 2d? | 2004-08-04 A | 2004-08-05 A | 90 | 100% | 2004-07-30 | 2004-08-02 | 1.25d? | 测试人员 | 10h | 10h | 11 | 11 | 11 | 系统测试报告 |  |  | ܁ |  |  |
| 92 | 1.5.8 | 系统测试编码返工 | 2d? | 2004-08-05 A | 2004-08-06 A | 91 | 100% | 2004-08-02 | 2004-08-03 | 1d? | 测试人员 | 8h | 8h | 9 | 9 | 9 |  |  |  |  |  |  |
| 93 | 1.5.9 | 测试阶段需求功能矩阵跟踪 | 2d? | 2004-08-06 A | 2004-08-09 A | 92 | 100% | 2004-08-03 | 2004-08-04 | 1d? | 需求人员 | 8h | 8h | 8 | 8 | 8 | 变更表 |  |  |  |  |  |
| 94 | 1.5.10 | 测试阶段度量数据收集 | 2d? | 2004-08-09 A | 2004-08-10 A | 93 | 100% | 2004-08-04 | 2004-08-05 | 1d? | 项目经理 | 8h | 8h | 8 | 8 | 8 | 度量收集计划 |  |  | ܁$ |  |  |
| 95 | 1.5.11 | 测试里程碑报告 | 2d? | 2004-08-10 A | 2004-08-11 A | 94 | 100% | 2004-08-05 | 2004-08-06 | 1d? | 项目经理 | 8h | 8h | 8 | 8 | 8 | 里程碑报告 |  |  |  |  |  |
| 96 | 1.5.12 | 研发体验 | 2d? | 2004-08-12 A | 2004-08-13 A | 97, 95 | 100% |  |  |  |  |  |  |  |  |  |  |  |  |  |  |  |
| 97 | 1.5.13 | 用户体验 | 2d? | 2004-08-11 A | 2004-08-12 A | 95 | 100% |  |  |  |  |  |  |  |  |  |  |  |  |  |  |  |

| ID | WBS | Task | Duration | Start | Finish | Predecessors | Complete | Baseline start | Baseline finish | Baseline duration | Constraint | Resources | Work | Actual work | Cost | Baseline cost | Actual cost | Text21 | Text29 | Text8 |
| --- | --- | --- | --- | --- | --- | --- | --- | --- | --- | --- | --- | --- | --- | --- | --- | --- | --- | --- | --- | --- |
| 98 | 1.6 | **验收阶段任务** | 5d? | 2004-08-16 A | 2004-08-20 A |  | 100% | 2004-08-06 | 2004-08-13 | 4.58d? |  |  | 50h | 50h | 51 | 51 | 51 |  |  |  |
| 99 | 1.6.1 | 项目试运行 | 1d? | 2004-08-16 A | 2004-08-16 A | 96, 97 | 100% | 2004-08-06 | 2004-08-09 | 0.83d? |  | 测试负责人; 编码人员; 项目经理 | 20h | 20h | 21 | 21 | 21 | 验收报告 | ܁ |  |
| 100 | 1.6.2 | 项目总结 | 5d? | 2004-08-16 A | 2004-08-20 A | 99 | 100% | 2004-08-09 | 2004-08-13 | 3.75d? |  | 项目经理 | 30h | 30h | 30 | 30 | 30 | 项目总结报告 |  |  |
| 101 | 1.7 | **需求变更控制** | 46d | 2004-05-10 A | 2004-07-12 A |  | 100% | 2004-05-10 | 2004-07-12 | 46d |  |  | 24h | 24h | 24 | 24 | 24 | 变更请求表 |  | 每个月1次变更 |
| 102 | 1.7.1 | 需求变更控制 1 | 1d | 2004-05-10 A | 2004-05-10 A |  | 100% | 2004-05-10 | 2004-05-10 | 1d | start no earlier than 2004-05-10 | 需求人员 | 8h | 8h | 8 | 8 | 8 |  |  |  |
| 103 | 1.7.2 | 需求变更控制 2 | 1d | 2004-06-10 A | 2004-06-10 A |  | 100% | 2004-06-10 | 2004-06-10 | 1d | start no earlier than 2004-06-10 | 需求人员 | 8h | 8h | 8 | 8 | 8 |  |  |  |
| 104 | 1.7.3 | 需求变更控制 3 | 1d | 2004-07-12 A | 2004-07-12 A |  | 100% | 2004-07-12 | 2004-07-12 | 1d | start no earlier than 2004-07-10 | 需求人员 | 8h | 8h | 8 | 8 | 8 |  |  |  |
| 105 | 1.8 | **项目跟踪与监控活动** | 52d? | 2004-05-13 A | 2004-07-23 A |  | 100% | 2004-05-10 | 2004-07-26 | 56d? |  |  | 127h | 127h | 127 | 140 | 127 |  |  |  |
| 106 | 1.8.1 | **计划变更控制** | 46d | 2004-05-19 A | 2004-07-21 A |  | 100% | 2004-05-19 | 2004-07-21 | 46d |  |  | 24h | 24h | 24 | 24 | 24 | 变更请求表 |  | 每个月1次变更，预留 |
| 107 | 1.8.1.1 | 计划变更控制 1 | 1d | 2004-05-19 A | 2004-05-19 A |  | 100% | 2004-05-19 | 2004-05-19 | 1d | start no earlier than 2004-05-19 | 项目经理 | 8h | 8h | 8 | 8 | 8 |  |  |  |
| 108 | 1.8.1.2 | 计划变更控制 2 | 1d | 2004-06-16 A | 2004-06-16 A |  | 100% | 2004-06-16 | 2004-06-16 | 1d | start no earlier than 2004-06-16 | 项目经理 | 8h | 8h | 8 | 8 | 8 |  |  |  |
| 109 | 1.8.1.3 | 计划变更控制 3 | 1d | 2004-07-21 A | 2004-07-21 A |  | 100% | 2004-07-21 | 2004-07-21 | 1d | start no earlier than 2004-07-21 | 项目经理 | 8h | 8h | 8 | 8 | 8 |  |  |  |
| 110 | 1.8.2 | **接口及集成活动跟踪** | 41d | 2004-05-13 A | 2004-07-08 A |  | 100% |  |  |  |  |  | 9h | 9h | 9 |  | 9 |  |  |  |
| 111 | 1.8.2.1 | 接口及集成活动跟踪 1 | 1d | 2004-05-13 A | 2004-05-13 A |  | 100% |  |  |  | start no earlier than 2004-05-13 | 项目经理 | 1h | 1h | 1 |  | 1 |  |  |  |
| 112 | 1.8.2.2 | 接口及集成活动跟踪 2 | 1d | 2004-05-20 A | 2004-05-20 A |  | 100% |  |  |  | start no earlier than 2004-05-20 | 项目经理 | 1h | 1h | 1 |  | 1 |  |  |  |
| 113 | 1.8.2.3 | 接口及集成活动跟踪 3 | 1d | 2004-05-27 A | 2004-05-27 A |  | 100% |  |  |  | start no earlier than 2004-05-27 | 项目经理 | 1h | 1h | 1 |  | 1 |  |  |  |
| 114 | 1.8.2.4 | 接口及集成活动跟踪 4 | 1d | 2004-06-03 A | 2004-06-03 A |  | 100% |  |  |  | start no earlier than 2004-06-03 | 项目经理 | 1h | 1h | 1 |  | 1 |  |  |  |
| 115 | 1.8.2.5 | 接口及集成活动跟踪 5 | 1d | 2004-06-10 A | 2004-06-10 A |  | 100% |  |  |  | start no earlier than 2004-06-10 | 项目经理 | 1h | 1h | 1 |  | 1 |  |  |  |
| 116 | 1.8.2.6 | 接口及集成活动跟踪 6 | 1d | 2004-06-17 A | 2004-06-17 A |  | 100% |  |  |  | start no earlier than 2004-06-17 | 项目经理 | 1h | 1h | 1 |  | 1 |  |  |  |
| 117 | 1.8.2.7 | 接口及集成活动跟踪 7 | 1d | 2004-06-24 A | 2004-06-24 A |  | 100% |  |  |  | start no earlier than 2004-06-24 | 项目经理 | 1h | 1h | 1 |  | 1 |  |  |  |
| 118 | 1.8.2.8 | 接口及集成活动跟踪 8 | 1d | 2004-07-01 A | 2004-07-01 A |  | 100% |  |  |  | start no earlier than 2004-07-01 | 项目经理 | 1h | 1h | 1 |  | 1 |  |  |  |
| 119 | 1.8.2.9 | 接口及集成活动跟踪 9 | 1d | 2004-07-08 A | 2004-07-08 A |  | 100% |  |  |  | start no earlier than 2004-07-08 | 项目经理 | 1h | 1h | 1 |  | 1 |  |  |  |
| 120 | 1.8.3 | **周例会** | 51d | 2004-05-14 A | 2004-07-23 A |  | 100% | 2004-05-14 | 2004-07-23 | 51d |  |  | 20h | 20h | 20 | 20 | 20 | 项目会议纪要 |  | 与项目成员有关 |
| 121 | 1.8.3.1 | 周例会 1 | 1d | 2004-05-14 A | 2004-05-14 A |  | 100% | 2004-05-14 | 2004-05-14 | 0.25d | start no earlier than 2004-05-14 | 项目组; QA | 4h | 4h | 4 | 4 | 4 |  |  |  |
| 122 | 1.8.3.2 | 周例会 2 | 1d | 2004-05-21 A | 2004-05-21 A |  | 100% | 2004-05-21 | 2004-05-21 | 0.25d | start no earlier than 2004-05-21 | 项目组; QA | 4h | 4h | 4 | 4 | 4 |  |  |  |
| 123 | 1.8.3.3 | 周例会 3 | 1d | 2004-05-28 A | 2004-05-28 A |  | 100% | 2004-05-28 | 2004-05-28 | 0.25d | start no earlier than 2004-05-28 | 项目组; QA | 4h | 4h | 4 | 4 | 4 |  |  |  |
| 124 | 1.8.3.4 | 周例会 4 | 1d | 2004-06-04 A | 2004-06-04 A |  | 100% | 2004-06-04 | 2004-06-04 | 0.25d | start no earlier than 2004-06-04 | 项目组; QA | 4h | 4h | 4 | 4 | 4 |  |  |  |
| 125 | 1.8.3.5 | 周例会 5 | 1d | 2004-06-11 A | 2004-06-11 A |  | 100% | 2004-06-11 | 2004-06-11 | 0.25d | start no earlier than 2004-06-11 | 项目组; QA | 4h | 4h | 4 | 4 | 4 |  |  |  |
| 126 | 1.8.3.6 | 周例会 6 | 1d | 2004-06-18 A | 2004-06-18 A |  | 100% | 2004-06-18 | 2004-06-18 | 1d | start no earlier than 2004-06-18 |  |  |  |  |  |  |  |  |  |
| 127 | 1.8.3.7 | 周例会 7 | 1d | 2004-06-25 A | 2004-06-25 A |  | 100% | 2004-06-25 | 2004-06-25 | 1d | start no earlier than 2004-06-25 |  |  |  |  |  |  |  |  |  |
| 128 | 1.8.3.8 | 周例会 8 | 1d | 2004-07-02 A | 2004-07-02 A |  | 100% | 2004-07-02 | 2004-07-02 | 1d | start no earlier than 2004-07-02 |  |  |  |  |  |  |  |  |  |
| 129 | 1.8.3.9 | 周例会 9 | 1d | 2004-07-09 A | 2004-07-09 A |  | 100% | 2004-07-09 | 2004-07-09 | 1d | start no earlier than 2004-07-09 |  |  |  |  |  |  |  |  |  |
| 130 | 1.8.3.10 | 周例会 10 | 1d | 2004-07-16 A | 2004-07-16 A |  | 100% | 2004-07-16 | 2004-07-16 | 1d | start no earlier than 2004-07-16 |  |  |  |  |  |  |  |  |  |
| 131 | 1.8.3.11 | 周例会 11 | 1d | 2004-07-23 A | 2004-07-23 A |  | 100% | 2004-07-23 | 2004-07-23 | 1d | start no earlier than 2004-07-23 |  |  |  |  |  |  |  |  |  |

Notes:
- 121: 每周例会。大约1个小时，计算参加人数即可。

| ID | WBS | Task | Duration | Start | Finish | Predecessors | Complete | Baseline start | Baseline finish | Baseline duration | Constraint | Resources | Work | Actual work | Cost | Baseline cost | Actual cost | Text8 | Text21 |
| --- | --- | --- | --- | --- | --- | --- | --- | --- | --- | --- | --- | --- | --- | --- | --- | --- | --- | --- | --- |
| 132 | 1.8.4 | **项目周报编写** | 51d | 2004-05-14 A | 2004-07-23 A |  | 100% | 2004-05-14 | 2004-07-23 | 50.25d |  |  | 44h | 44h | 44 | 44 | 44 | 与项目成员有关 | 项目周报和成员周报 |
| 133 | 1.8.4.1 | 项目周报编写 1 | 1d | 2004-05-14 A | 2004-05-14 A |  | 100% | 2004-05-14 | 2004-05-14 | 0.25d | start no earlier than 2004-05-14 | 项目组; QA | 4h | 4h | 4 | 4 | 4 |  |  |
| 134 | 1.8.4.2 | 项目周报编写 2 | 1d | 2004-05-21 A | 2004-05-21 A |  | 100% | 2004-05-21 | 2004-05-21 | 0.25d | start no earlier than 2004-05-21 | 项目组; QA | 4h | 4h | 4 | 4 | 4 |  |  |
| 135 | 1.8.4.3 | 项目周报编写 3 | 1d | 2004-05-28 A | 2004-05-28 A |  | 100% | 2004-05-28 | 2004-05-28 | 0.25d | start no earlier than 2004-05-28 | 项目组; QA | 4h | 4h | 4 | 4 | 4 |  |  |
| 136 | 1.8.4.4 | 项目周报编写 4 | 1d | 2004-06-04 A | 2004-06-04 A |  | 100% | 2004-06-04 | 2004-06-04 | 0.25d | start no earlier than 2004-06-04 | 项目组; QA | 4h | 4h | 4 | 4 | 4 |  |  |
| 137 | 1.8.4.5 | 项目周报编写 5 | 1d | 2004-06-11 A | 2004-06-11 A |  | 100% | 2004-06-11 | 2004-06-11 | 0.25d | start no earlier than 2004-06-11 | 项目组; QA | 4h | 4h | 4 | 4 | 4 |  |  |
| 138 | 1.8.4.6 | 项目周报编写 6 | 1d | 2004-06-18 A | 2004-06-18 A |  | 100% | 2004-06-18 | 2004-06-18 | 0.25d | start no earlier than 2004-06-18 | 项目组; QA | 4h | 4h | 4 | 4 | 4 |  |  |
| 139 | 1.8.4.7 | 项目周报编写 7 | 1d | 2004-06-25 A | 2004-06-25 A |  | 100% | 2004-06-25 | 2004-06-25 | 0.25d | start no earlier than 2004-06-25 | 项目组; QA | 4h | 4h | 4 | 4 | 4 |  |  |
| 140 | 1.8.4.8 | 项目周报编写 8 | 1d | 2004-07-02 A | 2004-07-02 A |  | 100% | 2004-07-02 | 2004-07-02 | 0.25d | start no earlier than 2004-07-02 | 项目组; QA | 4h | 4h | 4 | 4 | 4 |  |  |
| 141 | 1.8.4.9 | 项目周报编写 9 | 1d | 2004-07-09 A | 2004-07-09 A |  | 100% | 2004-07-09 | 2004-07-09 | 0.25d | start no earlier than 2004-07-09 | 项目组; QA | 4h | 4h | 4 | 4 | 4 |  |  |
| 142 | 1.8.4.10 | 项目周报编写 10 | 1d | 2004-07-16 A | 2004-07-16 A |  | 100% | 2004-07-16 | 2004-07-16 | 0.25d | start no earlier than 2004-07-16 | 项目组; QA | 4h | 4h | 4 | 4 | 4 |  |  |
| 143 | 1.8.4.11 | 项目周报编写 11 | 1d | 2004-07-23 A | 2004-07-23 A |  | 100% | 2004-07-23 | 2004-07-23 | 0.25d | start no earlier than 2004-07-23 | 项目组; QA | 4h | 4h | 4 | 4 | 4 |  |  |
| 144 | 1.8.5 | **项目问题和风险管理** | 51d | 2004-05-14 A | 2004-07-23 A |  | 100% | 2004-05-14 | 2004-07-23 | 50.25d |  |  | 22h | 22h | 22 | 22 | 22 |  | 项目问题日志和风险减缓日志 |
| 145 | 1.8.5.1 | 项目问题和风险管理 1 | 1d | 2004-05-14 A | 2004-05-14 A |  | 100% | 2004-05-14 | 2004-05-14 | 0.25d | start no earlier than 2004-05-14 | 项目经理 | 2h | 2h | 2 | 2 | 2 |  |  |
| 146 | 1.8.5.2 | 项目问题和风险管理 2 | 1d | 2004-05-21 A | 2004-05-21 A |  | 100% | 2004-05-21 | 2004-05-21 | 0.25d | start no earlier than 2004-05-21 | 项目经理 | 2h | 2h | 2 | 2 | 2 |  |  |
| 147 | 1.8.5.3 | 项目问题和风险管理 3 | 1d | 2004-05-28 A | 2004-05-28 A |  | 100% | 2004-05-28 | 2004-05-28 | 0.25d | start no earlier than 2004-05-28 | 项目经理 | 2h | 2h | 2 | 2 | 2 |  |  |
| 148 | 1.8.5.4 | 项目问题和风险管理 4 | 1d | 2004-06-04 A | 2004-06-04 A |  | 100% | 2004-06-04 | 2004-06-04 | 0.25d | start no earlier than 2004-06-04 | 项目经理 | 2h | 2h | 2 | 2 | 2 |  |  |
| 149 | 1.8.5.5 | 项目问题和风险管理 5 | 1d | 2004-06-11 A | 2004-06-11 A |  | 100% | 2004-06-11 | 2004-06-11 | 0.25d | start no earlier than 2004-06-11 | 项目经理 | 2h | 2h | 2 | 2 | 2 |  |  |
| 150 | 1.8.5.6 | 项目问题和风险管理 6 | 1d | 2004-06-18 A | 2004-06-18 A |  | 100% | 2004-06-18 | 2004-06-18 | 0.25d | start no earlier than 2004-06-18 | 项目经理 | 2h | 2h | 2 | 2 | 2 |  |  |
| 151 | 1.8.5.7 | 项目问题和风险管理 7 | 1d | 2004-06-25 A | 2004-06-25 A |  | 100% | 2004-06-25 | 2004-06-25 | 0.25d | start no earlier than 2004-06-25 | 项目经理 | 2h | 2h | 2 | 2 | 2 |  |  |
| 152 | 1.8.5.8 | 项目问题和风险管理 8 | 1d | 2004-07-02 A | 2004-07-02 A |  | 100% | 2004-07-02 | 2004-07-02 | 0.25d | start no earlier than 2004-07-02 | 项目经理 | 2h | 2h | 2 | 2 | 2 |  |  |
| 153 | 1.8.5.9 | 项目问题和风险管理 9 | 1d | 2004-07-09 A | 2004-07-09 A |  | 100% | 2004-07-09 | 2004-07-09 | 0.25d | start no earlier than 2004-07-09 | 项目经理 | 2h | 2h | 2 | 2 | 2 |  |  |
| 154 | 1.8.5.10 | 项目问题和风险管理 10 | 1d | 2004-07-16 A | 2004-07-16 A |  | 100% | 2004-07-16 | 2004-07-16 | 0.25d | start no earlier than 2004-07-16 | 项目经理 | 2h | 2h | 2 | 2 | 2 |  |  |
| 155 | 1.8.5.11 | 项目问题和风险管理 11 | 1d | 2004-07-23 A | 2004-07-23 A |  | 100% | 2004-07-23 | 2004-07-23 | 0.25d | start no earlier than 2004-07-23 | 项目经理 | 2h | 2h | 2 | 2 | 2 |  |  |
| 156 | 1.8.6 | 组间协调 | 1.47d? | 2004-07-05 A | 2004-07-15 A | 62 | 100% | 2004-07-01 | 2004-07-13 | 1d? |  | 项目经理 | 8h | 8h | 8 | 8 | 8 |  |  |

| ID | WBS | Task | Duration | Start | Finish | Predecessors | Complete | Baseline start | Baseline finish | Baseline duration | Constraint | Resources | Work | Actual work | Cost | Baseline cost | Actual cost | Text21 | Text8 |
| --- | --- | --- | --- | --- | --- | --- | --- | --- | --- | --- | --- | --- | --- | --- | --- | --- | --- | --- | --- |
| 157 | 1.9 | **质量保证任务** | 73d? | 2004-05-10 A | 2004-08-18 A |  | 100% | 2004-05-11 | 2004-08-10 | 65.77d? |  |  | 81h | 81h | 82 | 82 | 82 |  |  |
| 158 | 1.9.1 | 质量保证活动培训 | 1d? | 2004-05-11 A | 2004-05-11 A | 39 | 100% | 2004-05-11 | 2004-05-11 | 0.5d? |  | QA | 4h | 4h | 4 | 4 | 4 | 培训记录 |  |
| 159 | 1.9.2 | **QA过程评审** | 72d? | 2004-05-10 A | 2004-08-17 A |  | 100% | 2004-05-27 | 2004-08-09 | 51.98d? |  |  | 18h | 18h | 19 | 19 | 19 |  |  |
| 160 | 1.9.2.1 | 需求管理过程评审 | 1d? | 2004-05-10 A | 2004-05-10 A |  | 100% | 2004-05-27 | 2004-05-28 | 0.25d? |  | QA | 2h | 2h | 2 | 2 | 2 | 过程评审报告 | 可能多次 |
| 161 | 1.9.2.2 | 项目策划过程评审 | 1d? | 2004-05-10 A | 2004-05-10 A |  | 100% | 2004-07-13 | 2004-07-14 | 0.25d? |  | QA | 2h | 2h | 2 | 2 | 2 | 过程评审报告 |  |
| 162 | 1.9.2.3 | 项目跟踪与监控过程评审 | 1d? | 2004-05-10 A | 2004-05-10 A |  | 100% | 2004-06-18 | 2004-06-18 | 0.25d? |  | QA | 2h | 2h | 2 | 2 | 2 | 过程评审报告 | 可能多次 |
| 163 | 1.9.2.4 | 项目配置管理过程评审 | 1d? | 2004-05-10 A | 2004-05-10 A | 162 | 100% | 2004-06-18 | 2004-06-18 | 0.25d? |  | QA | 2h | 2h | 2 | 2 | 2 | 过程评审报告 | 可能多次 |
| 164 | 1.9.2.5 | 项目培训过程评审 | 1d? | 2004-05-10 A | 2004-05-10 A | 163 | 100% | 2004-06-18 | 2004-06-21 | 0.25d? |  | QA | 2h | 2h | 2 | 2 | 2 | 过程评审报告 | 可能多次 |
| 165 | 1.9.2.6 | 项目软件产品工程评审 | 1d? | 2004-05-10 A | 2004-05-10 A | 164 | 100% | 2004-06-21 | 2004-06-21 | 0.25d? |  | QA | 2h | 2h | 2 | 2 | 2 | 过程评审报告 | 可能多次 |
| 166 | 1.9.2.7 | 同行评审过程评审 | 1d? | 2004-05-11 A | 2004-05-11 A | 165 | 100% | 2004-06-21 | 2004-06-21 | 0.25d? |  | QA | 2h | 2h | 2 | 2 | 2 | 过程评审报告 | 可能多次 |
| 167 | 1.9.2.8 | 组间协调过程评审 | 1d? | 2004-05-11 A | 2004-05-11 A | 166 | 100% | 2004-06-21 | 2004-06-21 | 0.25d? |  | QA | 2h | 2h | 2 | 2 | 2 | 过程评审报告 | 可能多次 |
| 168 | 1.9.2.9 | 外部专家对SQA的评审 | 1d? | 2004-08-17 A | 2004-08-17 A | 99 | 100% | 2004-08-09 | 2004-08-09 | 0.25d? |  | 外部专家 | 2h | 2h | 3 | 3 | 3 | 对SQA的评审报告 |  |
| 169 | 1.9.3 | QA过程问题跟踪 | 2d? | 2004-08-17 A | 2004-08-18 A | 159 | 100% | 2004-08-09 | 2004-08-10 | 1d? |  | QA [50%] | 4h | 4h | 4 | 4 | 4 |  |  |
| 170 | 1.9.4 | **QA产品审计** | 1d? | 2004-05-10 A | 2004-05-10 A |  | 100% | 2004-05-27 | 2004-07-12 | 32.02d? |  |  | 9h | 9h | 9 | 9 | 9 |  |  |
| 171 | 1.9.4.1 | 软件需求规格说明书产品审计 | 1d? | 2004-05-10 A | 2004-05-10 A |  | 100% | 2004-05-27 | 2004-05-28 | 0.38d? |  | QA | 3h | 3h | 3 | 3 | 3 | 产品审计报告 |  |
| 172 | 1.9.4.2 | 概要设计说明书产品审计 | 1d? | 2004-05-10 A | 2004-05-10 A |  | 100% | 2004-05-31 | 2004-06-01 | 0.25d? |  | QA | 2h | 2h | 2 | 2 | 2 | 产品审计报告 |  |
| 173 | 1.9.4.3 | 用户文档产品审计 | 1d? | 2004-05-10 A | 2004-05-10 A |  | 100% | 2004-07-12 | 2004-07-12 | 0.5d? |  | QA | 4h | 4h | 4 | 4 | 4 | 产品审计报告 |  |
| 174 | 1.9.5 | QA产品审计问题跟踪 | 2d? | 2004-05-10 A | 2004-05-11 A | 170 | 100% | 2004-07-12 | 2004-07-13 | 1d? |  | QA [25%] | 2h | 2h | 2 | 2 | 2 |  |  |
| 175 | 1.9.6 | **QA项目支持任务** | 51d | 2004-05-12 A | 2004-07-21 A |  | 100% | 2004-05-12 | 2004-07-21 | 51d |  |  | 44h | 44h | 44 | 44 | 44 |  |  |
| 176 | 1.9.6.1 | QA项目支持任务 1 | 1d | 2004-05-12 A | 2004-05-12 A |  | 100% | 2004-05-12 | 2004-05-12 | 1d | start no earlier than 2004-05-12 | QA [50%] | 4h | 4h | 4 | 4 | 4 |  |  |
| 177 | 1.9.6.2 | QA项目支持任务 2 | 1d | 2004-05-19 A | 2004-05-19 A |  | 100% | 2004-05-19 | 2004-05-19 | 1d | start no earlier than 2004-05-19 | QA [50%] | 4h | 4h | 4 | 4 | 4 |  |  |
| 178 | 1.9.6.3 | QA项目支持任务 3 | 1d | 2004-05-26 A | 2004-05-26 A |  | 100% | 2004-05-26 | 2004-05-26 | 1d | start no earlier than 2004-05-26 | QA [50%] | 4h | 4h | 4 | 4 | 4 |  |  |
| 179 | 1.9.6.4 | QA项目支持任务 4 | 1d | 2004-06-02 A | 2004-06-02 A |  | 100% | 2004-06-02 | 2004-06-02 | 1d | start no earlier than 2004-06-02 | QA [50%] | 4h | 4h | 4 | 4 | 4 |  |  |
| 180 | 1.9.6.5 | QA项目支持任务 5 | 1d | 2004-06-09 A | 2004-06-09 A |  | 100% | 2004-06-09 | 2004-06-09 | 1d | start no earlier than 2004-06-09 | QA [50%] | 4h | 4h | 4 | 4 | 4 |  |  |
| 181 | 1.9.6.6 | QA项目支持任务 6 | 1d | 2004-06-16 A | 2004-06-16 A |  | 100% | 2004-06-16 | 2004-06-16 | 1d | start no earlier than 2004-06-16 | QA [50%] | 4h | 4h | 4 | 4 | 4 |  |  |
| 182 | 1.9.6.7 | QA项目支持任务 7 | 1d | 2004-06-23 A | 2004-06-23 A |  | 100% | 2004-06-23 | 2004-06-23 | 1d | start no earlier than 2004-06-23 | QA [50%] | 4h | 4h | 4 | 4 | 4 |  |  |
| 183 | 1.9.6.8 | QA项目支持任务 8 | 1d | 2004-06-30 A | 2004-06-30 A |  | 100% | 2004-06-30 | 2004-06-30 | 1d | start no earlier than 2004-06-30 | QA [50%] | 4h | 4h | 4 | 4 | 4 |  |  |
| 184 | 1.9.6.9 | QA项目支持任务 9 | 1d | 2004-07-07 A | 2004-07-07 A |  | 100% | 2004-07-07 | 2004-07-07 | 1d | start no earlier than 2004-07-07 | QA [50%] | 4h | 4h | 4 | 4 | 4 |  |  |
| 185 | 1.9.6.10 | QA项目支持任务 10 | 1d | 2004-07-14 A | 2004-07-14 A |  | 100% | 2004-07-14 | 2004-07-14 | 1d | start no earlier than 2004-07-14 | QA [50%] | 4h | 4h | 4 | 4 | 4 |  |  |
| 186 | 1.9.6.11 | QA项目支持任务 11 | 1d | 2004-07-21 A | 2004-07-21 A |  | 100% | 2004-07-21 | 2004-07-21 | 1d | start no earlier than 2004-07-21 | QA [50%] | 4h | 4h | 4 | 4 | 4 |  |  |

| ID | WBS | Task | Duration | Start | Finish | Predecessors | Complete | Baseline start | Baseline finish | Baseline duration | Constraint | Resources | Work | Actual work | Cost | Baseline cost | Actual cost | Text21 | Text29 | Text8 |
| --- | --- | --- | --- | --- | --- | --- | --- | --- | --- | --- | --- | --- | --- | --- | --- | --- | --- | --- | --- | --- |
| 187 | 1.10 | **配置管理任务** | 69d? | 2004-05-10 A | 2004-08-12 A |  | 100% | 2004-05-11 | 2004-08-09 | 64.19d? |  |  | 75h | 75h | 75 | 64 | 75 |  |  |  |
| 188 | 1.10.1 | 配置管理活动培训 | 1d? | 2004-05-12 A | 2004-05-12 A | 158 | 100% | 2004-05-11 | 2004-05-12 | 1d? |  | CM [50%] | 4h | 4h | 4 | 4 | 4 | 培训记录 |  |  |
| 189 | 1.10.2 | 配置库建立 | 1d? | 2004-05-10 A | 2004-05-10 A |  | 100% | 2004-07-13 | 2004-07-14 | 0.5d? |  | CM [50%] | 2h | 2h | 2 | 2 | 2 | 项目配置库 | ܁% |  |
| 190 | 1.10.3 | **配置项状态记录和发布** | 46d | 2004-05-13 A | 2004-07-15 A |  | 100% | 2004-05-13 | 2004-07-15 | 45.96d |  |  | 10h | 10h | 10 | 10 | 10 |  |  |  |
| 191 | 1.10.3.1 | 配置项状态记录和发布 1 | 1d | 2004-05-13 A | 2004-05-13 A |  | 100% | 2004-05-13 | 2004-05-13 | 1d | start no earlier than 2004-05-13 | CM [12.5%] | 1h | 1h | 1 | 1 | 1 |  | ܁% |  |
| 192 | 1.10.3.2 | 配置项状态记录和发布 2 | 1d | 2004-05-20 A | 2004-05-20 A |  | 100% | 2004-05-20 | 2004-05-20 | 0.96d | start no earlier than 2004-05-20 | CM [13%] | 1h | 1h | 1 | 1 | 1 |  | ܁% |  |
| 193 | 1.10.3.3 | 配置项状态记录和发布 3 | 1d | 2004-05-27 A | 2004-05-27 A |  | 100% | 2004-05-27 | 2004-05-27 | 0.96d | start no earlier than 2004-05-27 | CM [13%] | 1h | 1h | 1 | 1 | 1 |  | ܁% |  |
| 194 | 1.10.3.4 | 配置项状态记录和发布 4 | 1d | 2004-06-03 A | 2004-06-03 A |  | 100% | 2004-06-03 | 2004-06-03 | 0.96d | start no earlier than 2004-06-03 | CM [13%] | 1h | 1h | 1 | 1 | 1 |  | ܁% |  |
| 195 | 1.10.3.5 | 配置项状态记录和发布 5 | 1d | 2004-06-10 A | 2004-06-10 A |  | 100% | 2004-06-10 | 2004-06-10 | 0.96d | start no earlier than 2004-06-10 | CM [13%] | 1h | 1h | 1 | 1 | 1 |  | ܁% |  |
| 196 | 1.10.3.6 | 配置项状态记录和发布 6 | 1d | 2004-06-17 A | 2004-06-17 A |  | 100% | 2004-06-17 | 2004-06-17 | 0.96d | start no earlier than 2004-06-17 | CM [13%] | 1h | 1h | 1 | 1 | 1 |  | ܁% |  |
| 197 | 1.10.3.7 | 配置项状态记录和发布 7 | 1d | 2004-06-24 A | 2004-06-24 A |  | 100% | 2004-06-24 | 2004-06-24 | 0.96d | start no earlier than 2004-06-24 | CM [13%] | 1h | 1h | 1 | 1 | 1 |  | ܁% |  |
| 198 | 1.10.3.8 | 配置项状态记录和发布 8 | 1d | 2004-07-01 A | 2004-07-01 A |  | 100% | 2004-07-01 | 2004-07-01 | 0.96d | start no earlier than 2004-07-01 | CM [13%] | 1h | 1h | 1 | 1 | 1 |  | ܁% |  |
| 199 | 1.10.3.9 | 配置项状态记录和发布 9 | 1d | 2004-07-08 A | 2004-07-08 A |  | 100% | 2004-07-08 | 2004-07-08 | 0.96d | start no earlier than 2004-07-08 | CM [13%] | 1h | 1h | 1 | 1 | 1 |  | ܁% |  |
| 200 | 1.10.3.10 | 配置项状态记录和发布 10 | 1d | 2004-07-15 A | 2004-07-15 A |  | 100% | 2004-07-15 | 2004-07-15 | 0.96d | start no earlier than 2004-07-15 | CM [13%] | 1h | 1h | 1 | 1 | 1 |  | ܁% |  |
| 201 | 1.10.4 | 配置物理审计 | 1d? | 2004-06-18 A | 2004-06-18 A | 70 | 100% | 2004-06-14 | 2004-06-15 | 1d? |  | CM [50%] | 4h | 4h | 4 | 4 | 4 | 审计报告 | ܁% | 每个项目至少2次 |
| 202 | 1.10.5 | 配置功能审计 | 1d? | 2004-06-18 A | 2004-06-18 A | 70 | 100% | 2004-06-14 | 2004-06-15 | 1d? |  | CM [50%] | 4h | 4h | 4 | 4 | 4 | 审计报告 | ܁% | 每个项目至少2次 |
| 203 | 1.10.6 | 配置审计问题跟踪 | 1.04d? | 2004-06-24 A | 2004-07-07 A | 201, 202 | 100% | 2004-06-18 | 2004-07-02 | 1d? |  | 项目经理 [25%] | 2h | 2h | 2 | 2 | 2 |  | ܁% |  |
| 204 | 1.10.7 | **配置变更控制** | 51d | 2004-05-13 A | 2004-07-22 A |  | 100% | 2004-05-13 | 2004-07-22 | 51d |  |  | 22h | 22h | 22 | 22 | 22 | 变更申请表和配置项变更表，配置状态记录 |  |  |
| 205 | 1.10.7.1 | 配置变更控制 1 | 1d | 2004-05-13 A | 2004-05-13 A |  | 100% | 2004-05-13 | 2004-05-13 | 1d | start no earlier than 2004-05-13 | CM [25%] | 2h | 2h | 2 | 2 | 2 |  | ܁% |  |
| 206 | 1.10.7.2 | 配置变更控制 2 | 1d | 2004-05-20 A | 2004-05-20 A |  | 100% | 2004-05-20 | 2004-05-20 | 1d | start no earlier than 2004-05-20 | CM [25%] | 2h | 2h | 2 | 2 | 2 |  | ܁% |  |
| 207 | 1.10.7.3 | 配置变更控制 3 | 1d | 2004-05-27 A | 2004-05-27 A |  | 100% | 2004-05-27 | 2004-05-27 | 1d | start no earlier than 2004-05-27 | CM [25%] | 2h | 2h | 2 | 2 | 2 |  | ܁% |  |
| 208 | 1.10.7.4 | 配置变更控制 4 | 1d | 2004-06-03 A | 2004-06-03 A |  | 100% | 2004-06-03 | 2004-06-03 | 1d | start no earlier than 2004-06-03 | CM [25%] | 2h | 2h | 2 | 2 | 2 |  | ܁% |  |
| 209 | 1.10.7.5 | 配置变更控制 5 | 1d | 2004-06-10 A | 2004-06-10 A |  | 100% | 2004-06-10 | 2004-06-10 | 1d | start no earlier than 2004-06-10 | CM [25%] | 2h | 2h | 2 | 2 | 2 |  | ܁% |  |
| 210 | 1.10.7.6 | 配置变更控制 6 | 1d | 2004-06-17 A | 2004-06-17 A |  | 100% | 2004-06-17 | 2004-06-17 | 1d | start no earlier than 2004-06-17 | CM [25%] | 2h | 2h | 2 | 2 | 2 |  | ܁% |  |
| 211 | 1.10.7.7 | 配置变更控制 7 | 1d | 2004-06-24 A | 2004-06-24 A |  | 100% | 2004-06-24 | 2004-06-24 | 1d | start no earlier than 2004-06-24 | CM [25%] | 2h | 2h | 2 | 2 | 2 |  | ܁% |  |
| 212 | 1.10.7.8 | 配置变更控制 8 | 1d | 2004-07-01 A | 2004-07-01 A |  | 100% | 2004-07-01 | 2004-07-01 | 1d | start no earlier than 2004-07-01 | CM [25%] | 2h | 2h | 2 | 2 | 2 |  | ܁% |  |
| 213 | 1.10.7.9 | 配置变更控制 9 | 1d | 2004-07-08 A | 2004-07-08 A |  | 100% | 2004-07-08 | 2004-07-08 | 1d | start no earlier than 2004-07-08 | CM [25%] | 2h | 2h | 2 | 2 | 2 |  | ܁% |  |
| 214 | 1.10.7.10 | 配置变更控制 10 | 1d | 2004-07-15 A | 2004-07-15 A |  | 100% | 2004-07-15 | 2004-07-15 | 1d | start no earlier than 2004-07-15 | CM [25%] | 2h | 2h | 2 | 2 | 2 |  | ܁% |  |
| 215 | 1.10.7.11 | 配置变更控制 11 | 1d | 2004-07-22 A | 2004-07-22 A |  | 100% | 2004-07-22 | 2004-07-22 | 1d | start no earlier than 2004-07-22 | CM [25%] | 2h | 2h | 2 | 2 | 2 |  | ܁% |  |
| 216 | 1.10.8 | 产品构造及发布1 | 2d? | 2004-06-28 A | 2004-06-29 A | 80 | 100% | 2004-06-22 | 2004-06-24 | 2d? |  | CM [25%] | 4h | 4h | 4 | 4 | 4 | 软件产品和产品发布报告 | ܁% |  |
| 217 | 1.10.9 | 产品构造及发布2 | 2d? | 2004-07-28 A | 2004-07-29 A | 88 | 100% | 2004-07-22 | 2004-07-26 | 2d? |  | CM [25%] | 4h | 4h | 4 | 4 | 4 | 软件产品和产品发布报告 | ܁% |  |
| 218 | 1.10.10 | 产品构造及发布3 | 4d? | 2004-08-09 A | 2004-08-12 A | 92 | 100% | 2004-08-03 | 2004-08-09 | 4d? |  | CM [25%] | 8h | 8h | 8 | 8 | 8 | 软件产品和产品发布报告 | ܁% |  |

| ID | WBS | Task | Duration | Start | Finish | Complete | Baseline start | Baseline finish | Baseline duration | Constraint | Resources | Work | Actual work | Cost | Actual cost | Text29 |
| --- | --- | --- | --- | --- | --- | --- | --- | --- | --- | --- | --- | --- | --- | --- | --- | --- |
| 219 | 1.10.11 | **配置库备份** | 51d | 2004-05-14 A | 2004-07-23 A | 100% | 2004-05-14 | 2004-07-23 | 51d |  |  | 11h | 11h | 11 | 11 |  |
| 220 | 1.10.11.1 | 配置库备份 1 | 1d | 2004-05-14 A | 2004-05-14 A | 100% | 2004-05-14 | 2004-05-14 | 1d | start no earlier than 2004-05-14 | CM [12.5%] | 1h | 1h | 1 | 1 | ܁% |
| 221 | 1.10.11.2 | 配置库备份 2 | 1d | 2004-05-21 A | 2004-05-21 A | 100% | 2004-05-21 | 2004-05-21 | 1d | start no earlier than 2004-05-21 | CM [13%] | 1h | 1h | 1 | 1 | ܁% |
| 222 | 1.10.11.3 | 配置库备份 3 | 1d | 2004-05-28 A | 2004-05-28 A | 100% | 2004-05-28 | 2004-05-28 | 1d | start no earlier than 2004-05-28 | CM [13%] | 1h | 1h | 1 | 1 | ܁% |
| 223 | 1.10.11.4 | 配置库备份 4 | 1d | 2004-06-04 A | 2004-06-04 A | 100% | 2004-06-04 | 2004-06-04 | 1d | start no earlier than 2004-06-04 | CM [13%] | 1h | 1h | 1 | 1 | ܁% |
| 224 | 1.10.11.5 | 配置库备份 5 | 1d | 2004-06-11 A | 2004-06-11 A | 100% | 2004-06-11 | 2004-06-11 | 1d | start no earlier than 2004-06-11 | CM [13%] | 1h | 1h | 1 | 1 | ܁% |
| 225 | 1.10.11.6 | 配置库备份 6 | 1d | 2004-06-18 A | 2004-06-18 A | 100% | 2004-06-18 | 2004-06-18 | 1d | start no earlier than 2004-06-18 | CM [13%] | 1h | 1h | 1 | 1 | ܁% |
| 226 | 1.10.11.7 | 配置库备份 7 | 1d | 2004-06-25 A | 2004-06-25 A | 100% | 2004-06-25 | 2004-06-25 | 1d | start no earlier than 2004-06-25 | CM [13%] | 1h | 1h | 1 | 1 | ܁% |
| 227 | 1.10.11.8 | 配置库备份 8 | 1d | 2004-07-02 A | 2004-07-02 A | 100% | 2004-07-02 | 2004-07-02 | 1d | start no earlier than 2004-07-02 | CM [13%] | 1h | 1h | 1 | 1 | ܁% |
| 228 | 1.10.11.9 | 配置库备份 9 | 1d | 2004-07-09 A | 2004-07-09 A | 100% | 2004-07-09 | 2004-07-09 | 1d | start no earlier than 2004-07-09 | CM [13%] | 1h | 1h | 1 | 1 | ܁% |
| 229 | 1.10.11.10 | 配置库备份 10 | 1d | 2004-07-16 A | 2004-07-16 A | 100% | 2004-07-16 | 2004-07-16 | 1d | start no earlier than 2004-07-16 | CM [13%] | 1h | 1h | 1 | 1 | ܁% |
| 230 | 1.10.11.11 | 配置库备份 11 | 1d | 2004-07-23 A | 2004-07-23 A | 100% | 2004-07-23 | 2004-07-23 | 1d | start no earlier than 2004-07-23 | CM [13%] | 1h | 1h | 1 | 1 | ܁% |
