# 项目进度表模板

Schedule from MS Project, 2004-05-10 to 2004-08-13, costs in ￥, A marks actual dates.
CAP/EPG-MB-PP-2007-003

## Calendars

- 标准: Mon-Fri 08:00-12:00, 13:00-17:00; Sat-Sun off.

## Resources

| Resource | Rate | Cost per use |
| --- | --- | --- |
| 设计人员 | 1 | 1 |
| 测试人员 | 1 | 1 |
| 外部专家 | 1 | 1 |
| 编码人员 | 1 | 1 |
| 项目经理 | 1 |  |
| QA | 1 |  |
| 专家 | 1 |  |
| CM | 1 |  |
| 测试负责人 | 1 |  |
| 需求人员 | 1 |  |
| CCB | 1 |  |
| SM | 1 |  |
| 项目组 | 1 |  |
| 集成人员 | 1 |  |

## Schedule

| ID | WBS | Task | Duration | Start | Finish | Predecessors | Complete | Remaining | Baseline start | Baseline finish | Baseline duration | Total slack | Free slack | Resources | Work | Actual work | Cost | Baseline cost | Actual cost | Text5 | Text8 | Text21 | Text22 |
| --- | --- | --- | --- | --- | --- | --- | --- | --- | --- | --- | --- | --- | --- | --- | --- | --- | --- | --- | --- | --- | --- | --- | --- |
| 1 | 1 | **项目总体任务** | 69.96d? | 2004-05-10 A | 2004-08-13 |  | 1% | 69.22d? | 2004-05-10 | 2004-08-13 | 69.27d? | 0d |  |  | 3531h | 42h | 2,679.5 | 1,453.5 | 41 |  |  |  |  |
| 2 | 1.1 | **项目策划** | 48.04d? | 2004-05-10 A | 2004-07-15 |  | 15% | 40.62d? | 2004-05-10 | 2004-07-13 | 46.04d? | 21.29d |  |  | 273h | 35h | 261.5 | 245.5 | 34 |  |  |  |  |
| 3 | 1.1.1 | 项目立项 | 0.5d | 2004-05-21 | 2004-05-24 |  |  |  | 2004-05-21 | 2004-05-24 | 0.5d | -10.12d | 0d | 项目经理 | 4h |  | 3.5 | 3.5 |  | A项目参考 | 需要中心批准 | 立项报告 | A项目参考 |
| 4 | 1.1.2 | 定义需求开发过程 | 0.88d? | 2004-05-10 A | 2004-05-11 A | 3 | 100% |  | 2004-05-10 | 2004-05-11 | 0.88d? |  |  | 项目经理 | 7h | 7h | 7 | 7 | 7 |  | 本项目需求开发超过2周。 | 需求开发计划 |  |
| 5 | 1.1.3 | 制订需求开发计划 | 1d? | 2004-05-11 A | 2004-05-12 A | 4 | 100% |  | 2004-05-11 | 2004-05-12 | 1d? |  |  | 项目经理 | 8h | 8h | 7 | 7 | 7 |  | 本项目需求开发超过2周，需要制定计划 | 需求开发计划 |  |
| 6 | 1.1.4 | 项目团队建立 | 2.5d? | 2004-05-12 A | 2004-05-14 A | 3 | 100% |  | 2004-05-12 | 2004-05-14 | 2.5d? |  |  | 项目经理 | 20h | 20h | 20 | 20 | 20 |  | 初期只建立RM人员 | SDP |  |
| 7 | 1.1.5 | 项目策划培训 | 1d? | 2004-05-17 | 2004-05-17 | 6 |  |  | 2004-05-17 | 2004-05-17 | 1d? | 60.96d | 0d |  | 10h |  |  |  |  |  |  |  |  |
| 8 | 1.1.6 | 项目软件生命周期模型选择 | 1.5d? | 2004-05-18 | 2004-05-20 | 7 |  |  | 2004-05-18 | 2004-05-20 | 1.5d? | 61.46d |  | 项目经理; QA | 16h |  | 16 | 16 |  |  | 本项目选择瀑布型 | SDP |  |
| 9 | 1.1.7 | 定义项目的软件过程 | 1d? | 2004-05-27 | 2004-05-28 | 34 |  |  | 2004-05-27 | 2004-05-28 | 1d? | 22.29d | 0d | 项目经理; QA | 16h |  | 16 | 16 |  |  | 本项目按照研发项目定义，项目任务紧，团队能力高 | 项目软件过程定义 |  |
| 10 | 1.1.8 | 技术任务WBS拆分 | 1d? | 2004-05-28 | 2004-06-01 | 9 |  |  | 2004-05-28 | 2004-06-01 | 1d? | 22.29d | 0d | 项目经理 | 8h |  | 8 | 8 |  |  |  | WBS |  |
| 11 | 1.1.9 | 管理任务WBS拆分 | 1d? | 2004-06-01 | 2004-06-03 | 10 |  |  | 2004-06-01 | 2004-06-03 | 1d? | 22.29d | 0d | 项目经理 | 8h |  | 8 | 8 |  |  |  | WBS |  |
| 12 | 1.1.10 | 制定估计策略 | 1d? | 2004-06-03 | 2004-06-04 | 11 |  |  | 2004-06-03 | 2004-06-04 | 1d? | 22.29d | 0d | 项目经理 | 8h |  | 8 | 8 |  |  | 工作量是工时。 | SDP |  |
| 13 | 1.1.11 | 技术任务规模估计 | 0.33d? | 2004-06-04 | 2004-06-04 | 12 |  |  | 2004-06-04 | 2004-06-04 | 0.33d? | 22.29d | 0d | 项目经理; QA; 专家 | 8h |  | 8 | 8 |  |  | 维护类可以不估计 | 估计表 |  |
| 14 | 1.1.12 | 技术任务工作量估计 | 1.59d? | 2004-06-04 | 2004-06-08 | 13 |  |  | 2004-06-04 | 2004-06-08 | 1.59d? | 22.29d | 0d | 项目经理; QA; 专家 | 24h |  | 24 | 24 |  |  |  | 估计表 |  |
| 15 | 1.1.13 | 关键计算机资源估计 | 1d? | 2004-06-08 | 2004-06-09 | 14 |  |  | 2004-06-08 | 2004-06-09 | 1d? | 22.29d | 0d | 项目经理; QA | 16h |  | 16 | 16 |  |  |  |  |  |
| 16 | 1.1.14 | 工程设备和支持工具估计 | 1d? | 2004-06-09 | 2004-06-10 | 15 |  |  | 2004-06-09 | 2004-06-10 | 1d? | 22.29d | 0d | 项目经理; QA | 16h |  | 16 | 16 |  |  |  |  |  |
| 17 | 1.1.15 | 制定风险管理计划 | 1d? | 2004-06-10 | 2004-06-15 | 16 |  |  | 2004-06-10 | 2004-06-15 | 1d? | 22.29d | 0d | 项目经理 | 8h |  | 8 | 8 |  |  |  | 风险管理计划 |  |
| 18 | 1.1.16 | 制定同行评审计划 | 1d? | 2004-06-15 | 2004-06-17 | 17 |  |  | 2004-06-15 | 2004-06-17 | 1d? | 22.29d | 0d | 项目经理 | 8h |  | 8 | 8 |  |  |  | SDP |  |
| 19 | 1.1.17 | 采购计划 | 1d? | 2004-06-17 | 2004-06-18 | 18 |  |  |  |  |  | 20.29d | 0d | 项目经理 | 8h |  | 8 |  |  |  |  |  |  |
| 20 | 1.1.18 | 外包计划 | 1d? | 2004-06-18 | 2004-06-21 | 19 |  |  |  |  |  | 20.29d | 0d | 项目经理 | 8h |  | 8 |  |  |  |  |  |  |
| 21 | 1.1.19 | 制定培训计划 | 1d? | 2004-06-21 | 2004-06-22 | 20 |  |  | 2004-06-17 | 2004-06-18 | 1d? | 20.29d | 0d | 项目经理 | 8h |  | 8 | 8 |  |  | 主要进行CMM3过程内容的培训。 | 培训计划 |  |
| 22 | 1.1.20 | 明细任务日程安排 | 1d? | 2004-06-22 | 2004-06-24 | 21 |  |  | 2004-06-18 | 2004-06-22 | 1d? | 20.29d | 0d | 项目经理 | 8h |  | 8 | 8 |  |  |  | 软件估计书 |  |
| 23 | 1.1.21 | 制定配置管理计划 | 1d? | 2004-06-24 | 2004-06-25 | 22 |  |  | 2004-06-22 | 2004-06-23 | 1d? | 20.29d | 0d | CM | 8h |  | 8 | 8 |  |  |  | 配置管理计划 |  |
| 24 | 1.1.22 | 制定测试计划 | 1d? | 2004-06-25 | 2004-06-28 | 23 |  |  | 2004-06-23 | 2004-06-24 | 1d? | 20.29d | 0d | 测试负责人 | 8h |  | 8 | 8 |  |  |  | 软件测试计划 |  |
| 25 | 1.1.23 | 制定质量保证计划 | 1d? | 2004-06-28 | 2004-06-29 | 24 |  |  | 2004-06-24 | 2004-06-25 | 1d? | 20.29d | 0d | QA | 8h |  | 8 | 8 |  |  |  | 软件质量保证计划 |  |
| 26 | 1.1.24 | 制定项目度量收集计划 | 1d? | 2004-06-29 | 2004-07-09 | 25 |  |  | 2004-06-25 | 2004-07-07 | 1d? | 20.29d | 0d | 项目经理 | 8h |  | 8 | 8 |  |  |  | 项目级软件度量收集计划 |  |
| 27 | 1.1.25 | 制定组间协调计划 | 1d? | 2004-07-09 | 2004-07-12 | 26 |  |  | 2004-07-07 | 2004-07-08 | 1d? | 20.29d | 0d | 项目经理 | 8h |  | 8 | 8 |  |  |  | 组间协调计划 |  |
| 28 | 1.1.26 | 计划评审 | 1d? | 2004-07-13 | 2004-07-14 | 27 |  |  | 2004-07-09 | 2004-07-12 | 1d? | 20.29d | 0d | 项目经理 | 8h |  | 8 | 8 |  |  | 中心正式评审，中心批准。 | 评审准备表和报告 |  |
| 29 | 1.1.27 | 计划返工 | 1d? | 2004-07-14 | 2004-07-15 | 28 |  |  | 2004-07-12 | 2004-07-13 | 1d? | 21.29d |  | 项目经理 | 8h |  | 8 | 8 |  |  |  |  |  |

Notes:
- 1: WBS活动的裁剪，按照缺省原则执行。
- 7: 培训内容与参加的人数有关，注意工时的估计

| ID | WBS | Task | Duration | Start | Finish | Predecessors | Baseline start | Baseline finish | Baseline duration | Total slack | Free slack | Deadline | Resources | Work | Cost | Baseline cost | Text8 | Text21 | Text29 | Text3 | Text28 |
| --- | --- | --- | --- | --- | --- | --- | --- | --- | --- | --- | --- | --- | --- | --- | --- | --- | --- | --- | --- | --- | --- |
| 30 | 1.2 | **需求阶段任务** | 13.88d? | 2004-05-10 | 2004-05-27 |  | 2004-05-10 | 2004-05-27 | 13.88d? | -30.68d | 0d |  |  | 111h | 109 | 109 |  |  |  |  |  |
| 31 | 1.2.1 | 需求收集活动 | 10h | 2004-05-12 | 2004-05-13 | 5 | 2004-05-12 | 2004-05-13 | 10h | -33.05d | 0d |  | 需求人员 | 10h | 10 | 10 | 客户需求调研 | 客户需求说明书 | ܁! |  |  |
| 32 | 1.2.2 | 需求分析活动 | 5d? | 2004-05-13 | 2004-05-20 | 31 | 2004-05-13 | 2004-05-20 | 5d? | -33.05d | 0d |  | 需求人员 | 40h | 38 | 38 |  | 软件需求规格说明书 | ܁! |  |  |
| 33 | 1.2.3 | 需求同行评审 | 4.38d? | 2004-05-20 | 2004-05-27 | 32 | 2004-05-20 | 2004-05-27 | 4.38d? | 10.84d | 0d | 2004-07-06 | CCB | 35h | 35 | 35 |  | 评审准备表和报告 |  | 10 | 10 |
| 34 | 1.2.4 | 需求问题返工 | 0.38d? | 2004-05-27 | 2004-05-27 | 33 | 2004-05-27 | 2004-05-27 | 0.38d? | 20.29d | 0d |  | 需求人员 | 3h | 3 | 3 |  |  |  |  |  |
| 35 | 1.2.5 | 需求功能矩阵建立 | 0.88d? | 2004-05-27 | 2004-05-27 | 33 | 2004-05-27 | 2004-05-27 | 0.88d? | 55.96d |  |  | 需求人员 | 7h | 7 | 7 | 维护类可以只建立需求和测试之间的矩阵。 | 需求功能矩阵表和变更表 |  |  |  |
| 36 | 1.2.6 | 需求阶段度量数据收集 | 1d? | 2004-05-10 | 2004-05-18 |  | 2004-05-10 | 2004-05-18 | 1d? | 62.96d |  |  | 项目经理 | 8h | 8 | 8 |  | 度量收集计划 | ܁$ |  |  |
| 37 | 1.2.7 | 需求里程碑报告 | 1d? | 2004-05-21 | 2004-05-24 |  | 2004-05-21 | 2004-05-24 | 1d? | 59.71d |  |  | 项目经理 | 8h | 8 | 8 | 本项目不进行 | 项目阶段报告 |  |  |  |
| 38 | 1.3 | **设计阶段任务** | 46d? | 2004-05-10 | 2004-07-12 |  | 2004-05-10 | 2004-07-12 | 45.79d? | -24.3d | 0d |  |  | 301h | 316 | 298 |  |  |  |  |  |
| 39 | 1.3.1 | 需求培训 | 1d? | 2004-05-10 | 2004-05-10 |  | 2004-05-10 | 2004-05-10 | 1d? | 60.21d | 0d |  | 需求人员 | 8h | 8 | 8 |  | 培训记录 |  |  |  |
| 40 | 1.3.2 | 系统测试用例设计 | 2.5d? | 2004-05-20 | 2004-05-25 | 32 | 2004-05-20 | 2004-05-25 | 2.5d? | 55.71d | 0d |  | 测试负责人 | 20h | 20 | 20 |  | 系统测试用例 | ܁ |  |  |
| 41 | 1.3.3 | 系统测试方案编写 | 1.25d? | 2004-05-20 | 2004-05-21 | 32 | 2004-05-20 | 2004-05-21 | 1.25d? | 59.96d |  |  | 测试负责人 | 10h | 10 | 10 |  | 系统测试方案 | ܁ |  |  |
| 42 | 1.3.4 | 系统测试用例同行评审 | 1d? | 2004-05-25 | 2004-05-26 | 40 | 2004-05-25 | 2004-05-26 | 1d? | 55.71d | 0d |  | 测试负责人; 项目经理 | 16h | 16 | 16 |  | 评审准备表和报告 |  |  |  |
| 43 | 1.3.5 | 系统测试用例返工 | 1d? | 2004-05-26 | 2004-05-27 | 42 | 2004-05-26 | 2004-05-27 | 1d? | 56.71d |  |  | 测试人员 | 8h | 9 | 9 |  |  |  |  |  |
| 44 | 1.3.6 | 概要设计1任务 | 1.25d? | 2004-05-20 | 2004-05-21 | 32 | 2004-05-20 | 2004-05-21 | 1.25d? | -33.05d | 0d |  | 设计人员; 测试人员 | 20h | 22 | 22 |  | 概要设计说明书 | ܁" | 20 | 20 |
| 45 | 1.3.7 | 概要设计2任务 | 1.25d? | 2004-05-24 | 2004-05-28 | 44 | 2004-05-24 | 2004-05-28 | 1.25d? | -33.05d | 0d |  | 外部专家; 编码人员 | 10h | 12 | 12 |  |  | ܁" | 23 | 23 |
| 46 | 1.3.8 | 概要设计同行评审 | 0.5d? | 2004-05-28 | 2004-05-28 | 45 | 2004-05-28 | 2004-05-28 | 0.5d? | -33.05d | 0d |  | 设计人员; 项目经理 | 8h | 9 | 9 |  | 评审准备表和报告 |  |  |  |
| 47 | 1.3.9 | 概要设计返工 | 1d? | 2004-05-28 | 2004-05-31 | 46 | 2004-05-28 | 2004-05-31 | 1d? | -33.05d | 0d |  | 设计人员 | 8h | 9 | 9 |  |  |  |  |  |
| 48 | 1.3.10 | 接口设计 | 1d? | 2004-05-31 | 2004-06-01 | 47 |  |  |  | -33.05d | 0d |  | 设计人员 | 8h | 9 |  |  |  | ܁" |  |  |
| 49 | 1.3.11 | 接口设计评审 | 0.5d? | 2004-06-01 | 2004-06-02 | 48 |  |  |  | -33.05d | 0d |  | 设计人员; 项目经理 | 8h | 9 |  |  |  |  |  |  |
| 50 | 1.3.12 | 集成测试用例设计 | 1.88d? | 2004-06-02 | 2004-06-04 | 49 | 2004-05-31 | 2004-06-02 | 1.88d? | -33.05d | 0d |  | 测试人员 | 15h | 16 | 16 |  | 测试用例 | ܁ |  |  |
| 51 | 1.3.13 | 集成测试用例项目评审 | 0.33d? | 2004-06-04 | 2004-06-04 | 50 | 2004-06-02 | 2004-06-02 | 0.33d? | -33.05d | 0d |  | 测试人员; 测试负责人; 项目经理 | 8h | 9 | 9 |  | 评审准备表和报告 |  |  |  |
| 52 | 1.3.14 | 集成测试用例返工 | 1d? | 2004-06-04 | 2004-06-07 | 51 | 2004-06-02 | 2004-06-03 | 1d? | -33.05d | 0d |  | 测试人员 | 8h | 9 | 9 |  |  |  |  |  |
| 53 | 1.3.15 | 详细设计1任务 | 2.5d? | 2004-06-07 | 2004-06-09 | 52 | 2004-06-03 | 2004-06-08 | 2.5d? | -33.05d | 0d |  | 设计人员 | 20h | 21 | 21 |  | 详细设计说明书 | ܁" | 60 | 60 |
| 54 | 1.3.16 | 详细设计2任务 | 3.75d? | 2004-06-09 | 2004-06-15 | 53 | 2004-06-08 | 2004-06-14 | 3.75d? | 43.26d |  |  | 设计人员 | 30h | 31 | 31 |  |  | ܁" | 68 | 68 |
| 55 | 1.3.17 | 详细设计走查 | 1d? | 2004-06-14 | 2004-06-17 | 52, 53 | 2004-06-11 | 2004-06-17 | 1d? | 11.96d | 0d |  | 项目经理 | 8h | 8 | 8 |  |  |  |  |  |
| 56 | 1.3.18 | 详细设计返工 | 1d? | 2004-06-18 | 2004-06-18 | 55 | 2004-06-17 | 2004-06-18 | 1d? | 11.96d | 0d |  | 设计人员 | 8h | 9 | 9 |  |  |  |  |  |
| 57 | 1.3.19 | 设计阶段需求功能矩阵跟踪 | 1d? | 2004-06-21 | 2004-06-21 | 56 | 2004-06-18 | 2004-06-21 | 1d? | 24d | 2d |  | 需求人员 | 8h | 8 | 8 |  | 需求功能矩阵变更表 |  |  |  |
| 58 | 1.3.20 | 设计阶段度量数据收集 | 1d? | 2004-07-12 | 2004-07-12 | 57 | 2004-07-09 | 2004-07-12 | 1d? | 23.96d |  |  | 项目经理 | 8h | 8 | 8 |  | 度量收集计划 | ܁$ |  |  |
| 59 | 1.3.21 | 用户操作手册编写 | 1d? | 2004-05-20 | 2004-05-21 | 39 | 2004-05-20 | 2004-05-21 | 1d? | 60.21d |  |  | 项目经理 | 8h | 8 | 8 |  | 操作手册 | ܁" |  |  |
| 60 | 1.3.22 | 用户安装手册编写 | 1d? | 2004-06-04 | 2004-06-08 | 47 | 2004-06-04 | 2004-06-08 | 1d? | 48.71d |  |  | 项目经理 | 8h | 8 | 8 |  | 安装手册 | ܁" |  |  |
| 61 | 1.3.23 | 用户维护手册编写 | 1d? | 2004-06-21 | 2004-06-24 | 56 | 2004-06-18 | 2004-06-23 | 1d? | 30d | 0d |  | 项目经理 | 8h | 8 | 8 |  | 维护手册 | ܁" |  |  |
| 62 | 1.3.24 | 设计里程碑报告 | 5d? | 2004-06-21 | 2004-07-02 | 56 | 2004-06-18 | 2004-07-01 | 5d? | 30.79d |  |  | 项目经理 | 40h | 40 | 40 |  | 里程碑报告 |  |  |  |

| ID | WBS | Task | Duration | Start | Finish | Predecessors | Baseline start | Baseline finish | Baseline duration | Total slack | Free slack | Resources | Work | Cost | Baseline cost | Text21 | Text3 | Text28 | Text29 | Text4 | Text27 |
| --- | --- | --- | --- | --- | --- | --- | --- | --- | --- | --- | --- | --- | --- | --- | --- | --- | --- | --- | --- | --- | --- |
| 63 | 1.4 | **编码和单元测试任务** | 26.12d? | 2004-06-09 | 2004-07-16 |  | 2004-06-08 | 2004-07-15 | 26.87d? | -33.05d | 0d |  | 290h | 300 | 268 |  |  |  |  |  |  |
| 64 | 1.4.1 | 设计培训 | 1d? | 2004-06-21 | 2004-06-21 | 56 | 2004-06-18 | 2004-06-21 | 1d? | 20.9d | 0d | 设计人员 | 8h | 9 | 9 | 培训记录 |  |  |  |  |  |
| 65 | 1.4.2 | 编码培训 | 1d? | 2004-07-15 | 2004-07-16 | 64 | 2004-07-14 | 2004-07-15 | 1d? | 20.9d |  | 项目经理 | 8h | 8 | 8 | 培训记录 |  |  |  |  |  |
| 66 | 1.4.3 | 单元测试用例设计 | 3.75d? | 2004-06-24 | 2004-06-29 | 53, 61 | 2004-06-23 | 2004-06-29 | 3.75d? | 30d | 0d | 测试人员 | 30h | 31 | 31 | 测试用例 | 100 | 100 | ܁ |  |  |
| 67 | 1.4.4 | 单元测试用例非正式评审 | 1d? | 2004-06-29 | 2004-06-30 | 66 | 2004-06-29 | 2004-06-30 | 1d? | 30d | 0d | 测试负责人 | 8h | 8 | 8 |  |  |  |  |  |  |
| 68 | 1.4.5 | 单元测试用例返工 | 1d? | 2004-06-30 | 2004-07-01 | 67 | 2004-06-30 | 2004-07-01 | 1d? | 31d |  | 测试人员 | 8h | 9 | 9 |  |  |  |  |  |  |
| 69 | 1.4.6 | 编码1任务 | 2.5d? | 2004-06-09 | 2004-06-14 | 53 | 2004-06-08 | 2004-06-10 | 2.5d? | -33.05d | 0d | 编码人员 | 20h | 21 | 21 | 编码1 | 1000 | 1000 | ܁# | LOC | LOC |
| 70 | 1.4.7 | 编码2任务 | 1.88d? | 2004-06-14 | 2004-06-16 | 69 | 2004-06-10 | 2004-06-14 | 1.88d? | 21.67d | 0d | 编码人员 | 15h | 16 | 16 | 编码2 | 700 | 700 | ܁# | LOC | LOC |
| 71 | 1.4.8 | 编码3任务 | 3.75d? | 2004-06-16 | 2004-06-22 | 70 | 2004-06-14 | 2004-06-18 | 3.75d? | 35.89d | 0d | 编码人员 | 30h | 31 | 31 | 编码3 | 1300 | 1300 | ܁# | LOC | LOC |
| 72 | 1.4.9 | 编码4任务 | 2.5d? | 2004-06-22 | 2004-06-24 | 71 | 2004-06-18 | 2004-06-23 | 2.5d? | 36.39d |  | 编码人员 | 20h | 21 | 21 | 编码4 | 1100 | 1100 | ܁# | LOC | LOC |
| 73 | 1.4.10 | 编码走查 | 1d? | 2004-06-21 | 2004-07-08 | 70 | 2004-06-18 | 2004-07-08 | 1d? | 26.14d |  | 项目经理 | 8h | 8 | 8 |  |  |  |  |  |  |
| 74 | 1.4.11 | 单元测试1 | 2.5d? | 2004-06-14 | 2004-06-16 | 69 | 2004-06-10 | 2004-06-15 | 2.5d? | -33.05d | 0d | 测试人员 | 20h | 21 | 21 | 测试记录 |  |  | ܁ |  |  |
| 75 | 1.4.12 | 单元测试2 | 4.38d? | 2004-06-16 | 2004-06-23 | 74 | 2004-06-15 | 2004-06-21 | 4.38d? | -33.05d | 0d | 测试人员 | 35h | 36 | 36 | 测试记录 |  |  | ܁ |  |  |
| 76 | 1.4.13 | 集成任务1 | 1.5d? | 2004-06-23 | 2004-06-24 | 75 |  |  |  | -33.05d | 0d | 集成人员 | 12h | 12 |  | 集成报告 |  |  |  |  |  |
| 77 | 1.4.14 | 集成任务2 | 2.5d? | 2004-06-24 | 2004-06-29 | 76 |  |  |  | -33.05d | 0d | 集成人员 | 20h | 20 |  | 集成报告 |  |  |  |  |  |
| 78 | 1.4.15 | 用户文档评审 | 1d? | 2004-06-29 | 2004-07-08 | 77 | 2004-06-25 | 2004-07-06 | 1d? | -33.05d | 0d | 项目经理 | 8h | 8 | 8 | 评审准备表和报告 |  |  |  |  |  |
| 79 | 1.4.16 | 用户文档返工 | 1d? | 2004-07-08 | 2004-07-13 | 78 | 2004-07-06 | 2004-07-12 | 1d? | -33.05d | 0d | 项目经理 | 8h | 8 | 8 |  |  |  |  |  |  |
| 80 | 1.4.17 | 单元测试编码返工 | 1d? | 2004-06-23 | 2004-06-24 | 74, 75 | 2004-06-21 | 2004-06-22 | 1d? | 21.79d | 0d | 编码人员 | 8h | 9 | 9 |  |  |  |  |  |  |
| 81 | 1.4.18 | 需求功能矩阵跟踪 | 1d? | 2004-06-24 | 2004-06-25 | 80 | 2004-06-22 | 2004-06-23 | 1d? | 21.79d | 0.67d | 需求人员 | 8h | 8 | 8 | 变更表 |  |  |  |  |  |
| 82 | 1.4.19 | 编码阶段度量数据收集 | 1d? | 2004-07-05 | 2004-07-09 | 81 | 2004-07-02 | 2004-07-09 | 1d? | 23.08d | 0d | 项目经理 | 8h | 8 | 8 | 度量收集计划 |  |  | ܁$ |  |  |
| 83 | 1.4.20 | 编码里程碑报告 | 1d? | 2004-07-09 | 2004-07-12 | 82 | 2004-07-09 | 2004-07-12 | 1d? | 24.08d |  | 项目经理 | 8h | 8 | 8 | 里程碑报告 |  |  |  |  |  |
| 84 | 1.5 | **测试阶段任务** | 21.5d? | 2004-07-13 | 2004-08-12 |  | 2004-07-12 | 2004-08-06 | 19.5d? | -33.05d | 0d |  | 166h | 172 | 172 |  |  |  |  |  |  |
| 85 | 1.5.1 | 集成测试培训 | 1d? | 2004-07-13 | 2004-07-14 | 79 | 2004-07-12 | 2004-07-13 | 1d? | -33.05d | 0d | 测试负责人 | 8h | 8 | 8 | 培训记录 |  |  |  |  |  |
| 86 | 1.5.2 | 集成测试任务 | 6.25d? | 2004-07-14 | 2004-07-23 | 85 | 2004-07-13 | 2004-07-21 | 6.25d? | -33.05d | 0d | 测试人员 | 50h | 51 | 51 |  |  |  | ܁ |  |  |
| 87 | 1.5.3 | 集成测试报告编写 | 1.25d? | 2004-07-23 | 2004-07-26 | 86 | 2004-07-21 | 2004-07-22 | 1.25d? | 14.66d |  | 测试人员 | 10h | 11 | 11 | 集成测试报告 |  |  | ܁ |  |  |
| 88 | 1.5.4 | 集成测试编码返工 | 1d? | 2004-07-23 | 2004-07-26 | 86 | 2004-07-21 | 2004-07-22 | 1d? | -33.05d | 0d | 编码人员 | 8h | 9 | 9 |  |  |  |  |  |  |
| 89 | 1.5.5 | 系统测试培训 | 1d? | 2004-07-26 | 2004-07-27 | 88 | 2004-07-22 | 2004-07-23 | 1d? | -33.05d | 0d | 测试负责人 | 8h | 8 | 8 | 培训记录 |  |  |  |  |  |
| 90 | 1.5.6 | 系统测试任务 | 5d? | 2004-07-27 | 2004-08-03 | 89 | 2004-07-23 | 2004-07-30 | 5d? | -5.3d | 0d | 测试人员 | 40h | 41 | 41 |  |  |  | ܁ |  |  |
| 91 | 1.5.7 | 系统测试报告编写 | 1.25d? | 2004-08-03 | 2004-08-04 | 90 | 2004-07-30 | 2004-08-02 | 1.25d? | -5.3d | 0d | 测试人员 | 10h | 11 | 11 | 系统测试报告 |  |  | ܁ |  |  |
| 92 | 1.5.8 | 系统测试编码返工 | 1d? | 2004-08-04 | 2004-08-05 | 91 | 2004-08-02 | 2004-08-03 | 1d? | -5.3d | 0d | 测试人员 | 8h | 9 | 9 |  |  |  |  |  |  |
| 93 | 1.5.9 | 测试阶段需求功能矩阵跟踪 | 1d? | 2004-08-05 | 2004-08-06 | 92 | 2004-08-03 | 2004-08-04 | 1d? | 0.66d | 0d | 需求人员 | 8h | 8 | 8 | 变更表 |  |  |  |  |  |
| 94 | 1.5.10 | 测试阶段度量数据收集 | 1d? | 2004-08-06 | 2004-08-09 | 93 | 2004-08-04 | 2004-08-05 | 1d? | 0.66d | 0d | 项目经理 | 8h | 8 | 8 | 度量收集计划 |  |  | ܁$ |  |  |
| 95 | 1.5.11 | 测试里程碑报告 | 1d? | 2004-08-09 | 2004-08-10 | 94 | 2004-08-05 | 2004-08-06 | 1d? | 0.66d | 0d | 项目经理 | 8h | 8 | 8 | 里程碑报告 |  |  |  |  |  |
| 96 | 1.5.12 | 用户体验 | 1d? | 2004-08-10 | 2004-08-11 | 95 |  |  |  | 0.66d | 0d |  |  |  |  |  |  |  |  |  |  |
| 97 | 1.5.13 | 研发体验 | 1d? | 2004-08-11 | 2004-08-12 | 96 |  |  |  | 1.66d |  |  |  |  |  |  |  |  |  |  |  |

| ID | WBS | Task | Duration | Start | Finish | Predecessors | Complete | Remaining | Baseline start | Baseline finish | Baseline duration | Total slack | Constraint | Resources | Work | Actual work | Cost | Baseline cost | Actual cost | Text21 | Text22 | Text8 | Text28 |
| --- | --- | --- | --- | --- | --- | --- | --- | --- | --- | --- | --- | --- | --- | --- | --- | --- | --- | --- | --- | --- | --- | --- | --- |
| 98 | 1.6 | **项目策划** | 47d | 2004-05-10 A | 2004-07-13 |  | 22% | 36.72d | 2004-08-06 | 2004-08-13 | 4.58d? |  |  |  | 20h | 7h | 20 | 51 | 7 |  |  |  |  |
| 99 | 1.6.1 | 项目立项 | 2d? | 2004-05-21 | 2004-05-24 |  |  |  | 2004-08-06 | 2004-08-09 | 0.83d? | 58.96d | finish no earlier than 2004-05-24 | 项目经理 | 4h |  | 4 | 21 |  | 立项报告 | A项目参考 |  |  |
| 100 | 1.6.2 | 定义需求开发过程 | 2d? | 2004-05-10 A | 2004-05-25 | 3 | 44% | 1.12d? | 2004-08-09 | 2004-08-13 | 3.75d? | 58.71d | finish no earlier than 2004-05-11 | 项目经理 | 16h | 7h | 16 | 30 | 7 | 需求开发计划 |  |  |  |
| 101 | 1.7 | **制订需求开发计划** | 2d | 2004-05-11 | 2004-05-12 | 4 |  |  | 2004-05-10 | 2004-07-12 | 46d |  |  | 项目经理 | 40h |  | 40 | 24 |  | 需求开发计划 |  | 每个月1次变更 |  |
| 102 | 1.7.1 | 需求变更控制 1 | 1d | 2004-05-10 | 2004-05-10 |  |  |  | 2004-05-10 | 2004-05-10 | 1d | 68.96d | start no earlier than 2004-05-10 | 需求人员 | 8h |  | 8 | 8 |  |  |  |  |  |
| 103 | 1.7.2 | 需求变更控制 2 | 1d | 2004-06-10 | 2004-06-10 |  |  |  | 2004-06-10 | 2004-06-10 | 1d | 45.96d | start no earlier than 2004-06-10 | 需求人员 | 8h |  | 8 | 8 |  |  |  |  |  |
| 104 | 1.7.3 | 需求变更控制 3 | 1d | 2004-07-12 | 2004-07-12 |  |  |  | 2004-07-12 | 2004-07-12 | 1d | 23.96d | start no earlier than 2004-07-10 | 需求人员 | 8h |  | 8 | 8 |  |  |  |  |  |
| 105 | 1.8 | **项目团队建立** | 3d | 2004-05-12 | 2004-05-14 | 3 |  |  | 2004-05-10 | 2004-07-26 | 56d? |  |  | 项目经理 | 1033h |  | 636 | 140 |  | SDP |  |  |  |
| 106 | 1.8.1 | **项目策划培训** | 1d | 2004-05-17 | 2004-05-17 | 6 |  |  | 2004-05-19 | 2004-07-21 | 46d |  |  |  | 40h |  | 40 | 24 |  |  |  | 每个月1次变更，预留 |  |
| 107 | 1.8.1.1 | 项目软件生命周期模型选择 | 3d | 2004-05-18 | 2004-05-20 | 7 |  |  | 2004-05-19 | 2004-05-19 | 1d | 60.96d | finish no earlier than 2004-05-20 | 项目经理; QA | 16h |  | 16 | 8 |  | SDP |  |  |  |
| 108 | 1.8.1.2 | 定义项目的软件过程 | 2d | 2004-05-27 | 2004-05-31 | 34 |  |  | 2004-06-16 | 2004-06-16 | 1d | 54.29d | finish no earlier than 2004-05-28 | 项目经理; QA | 16h |  | 16 | 8 |  | 项目软件过程定义 |  |  |  |
| 109 | 1.8.1.3 | 技术任务WBS拆分 | 3d | 2004-05-28 | 2004-06-02 | 9 |  |  | 2004-07-21 | 2004-07-21 | 1d | 52.29d | finish no earlier than 2004-06-01 | 项目经理 | 8h |  | 8 | 8 |  | WBS |  |  |  |
| 110 | 1.8.2 | **管理任务WBS拆分** | 3d | 2004-06-01 | 2004-06-03 | 10 |  |  |  |  |  |  |  | 项目经理 | 128h |  | 128 |  |  | WBS |  |  |  |
| 111 | 1.8.2.1 | 制定估计策略 | 2d | 2004-06-03 | 2004-06-07 | 11 |  |  |  |  |  | 49.96d | finish no earlier than 2004-06-04 | 项目经理 | 8h |  | 8 |  |  | SDP |  |  |  |
| 112 | 1.8.2.2 | 技术任务规模估计 | 1d | 2004-06-04 | 2004-06-07 | 12 |  |  |  |  |  | 49.71d | finish no earlier than 2004-06-04 | 项目经理; QA; 专家 | 8h |  | 8 |  |  | 估计表 |  |  |  |
| 113 | 1.8.2.3 | 技术任务工作量估计 | 3d | 2004-06-04 | 2004-06-09 | 13 |  |  |  |  |  | 47.37d | finish no earlier than 2004-06-08 | 项目经理; QA; 专家 | 24h |  | 24 |  |  | 估计表 |  |  |  |
| 114 | 1.8.2.4 | 关键计算机资源估计 | 2d | 2004-06-08 | 2004-06-10 | 14 |  |  |  |  |  | 46.12d | finish no earlier than 2004-06-09 | 项目经理; QA | 16h |  | 16 |  |  |  |  |  |  |
| 115 | 1.8.2.5 | 工程设备和支持工具估计 | 2d | 2004-06-09 | 2004-06-11 | 15 |  |  |  |  |  | 45.12d | finish no earlier than 2004-06-10 | 项目经理; QA | 16h |  | 16 |  |  |  |  |  |  |
| 116 | 1.8.2.6 | 制定风险管理计划 | 4d | 2004-06-10 | 2004-06-16 | 16 |  |  |  |  |  | 42.12d | finish no earlier than 2004-06-15 | 项目经理 | 8h |  | 8 |  |  | 风险管理计划 |  |  |  |
| 117 | 1.8.2.7 | 制定同行评审计划 | 3d | 2004-06-15 | 2004-06-18 | 17 |  |  |  |  |  | 40.88d | finish no earlier than 2004-06-17 | 项目经理 | 8h |  | 8 |  |  | SDP |  |  |  |
| 118 | 1.8.2.8 | 制定培训计划 | 2d | 2004-06-17 | 2004-06-21 | 18 |  |  |  |  |  | 39.62d | finish no earlier than 2004-06-18 | 项目经理 | 8h |  | 8 |  |  | 培训计划 |  |  |  |
| 119 | 1.8.2.9 | 明细任务日程安排 | 3d | 2004-06-22 | 2004-06-25 | 21 |  |  |  |  |  | 35.25d | finish no earlier than 2004-06-22 | 项目经理 | 8h |  | 8 |  |  | 软件估计书 |  |  |  |
| 120 | 1.8.3 | **制定配置管理计划** | 2d | 2004-06-22 | 2004-06-23 | 22 |  |  | 2004-05-14 | 2004-07-23 | 51d |  |  | CM | 263h |  | 152 | 20 |  | 配置管理计划 |  | 与项目成员有关 |  |
| 121 | 1.8.3.1 | 制定测试计划 | 2d | 2004-06-25 | 2004-06-29 | 23 |  |  | 2004-05-14 | 2004-05-14 | 0.25d | 33.25d | finish no earlier than 2004-06-24 | 测试负责人 | 8h |  | 8 | 4 |  | 软件测试计划 |  |  |  |
| 122 | 1.8.3.2 | 制定质量保证计划 | 2d | 2004-06-28 | 2004-06-30 | 24 |  |  | 2004-05-21 | 2004-05-21 | 0.25d | 32.25d | finish no earlier than 2004-06-25 | QA | 8h |  | 8 | 4 |  | 软件质量保证计划 |  |  |  |
| 123 | 1.8.3.3 | 制定项目度量收集计划 | 9d | 2004-06-29 | 2004-07-12 | 25 |  |  | 2004-05-28 | 2004-05-28 | 0.25d | 24.25d | finish no earlier than 2004-07-07 | 项目经理 | 8h |  | 8 | 4 |  | 项目级软件度量收集计划 |  |  |  |
| 124 | 1.8.3.4 | 制定组间协调计划 | 2d | 2004-07-09 | 2004-07-13 | 26 |  |  | 2004-06-04 | 2004-06-04 | 0.25d | 23.39d | finish no earlier than 2004-07-08 | 项目经理 | 8h |  | 8 | 4 |  | 组间协调计划 |  |  |  |
| 125 | 1.8.3.5 | 计划评审 | 2d | 2004-07-12 | 2004-07-14 | 27 |  |  | 2004-06-11 | 2004-06-11 | 0.25d | 22.39d | finish no earlier than 2004-07-12 | 项目经理 | 8h |  | 8 | 4 |  | 评审准备表和报告 |  |  |  |
| 126 | 1.8.3.6 | 计划返工 | 2d | 2004-07-14 | 2004-07-16 | 28 |  |  | 2004-06-18 | 2004-06-18 | 1d | 20.29d | finish no earlier than 2004-07-13 | 项目经理 | 8h |  | 8 |  |  |  |  |  |  |
| 127 | 1.8.3.7 | 需求阶段任务 | 14d | 2004-05-10 | 2004-05-27 |  |  |  | 2004-06-25 | 2004-06-25 | 1d | 55.96d | finish no earlier than 2004-05-27 |  | 111h |  |  |  |  |  |  |  |  |
| 128 | 1.8.3.8 | 需求收集活动 | 2d | 2004-05-12 | 2004-05-14 | 5 |  |  | 2004-07-02 | 2004-07-02 | 1d | 65.46d | finish no earlier than 2004-05-13 | 需求人员 | 10h |  | 10 |  |  | 客户需求说明书 |  |  |  |
| 129 | 1.8.3.9 | 需求分析活动 | 6d | 2004-05-13 | 2004-05-21 | 31 |  |  | 2004-07-09 | 2004-07-09 | 1d | 60.21d | finish no earlier than 2004-05-20 | 需求人员 | 40h |  | 40 |  |  | 软件需求规格说明书 |  |  |  |
| 130 | 1.8.3.10 | 需求同行评审 | 6d | 2004-05-20 | 2004-05-28 | 32 |  |  | 2004-07-16 | 2004-07-16 | 1d | 55.21d | finish no earlier than 2004-05-27 | CCB | 35h |  | 35 |  |  | 评审准备表和报告 |  |  | 10 |
| 131 | 1.8.3.11 | 需求问题返工 | 1d | 2004-05-27 | 2004-05-28 | 33 |  |  | 2004-07-23 | 2004-07-23 | 1d | 55.84d | finish no earlier than 2004-05-27 | 需求人员 | 3h |  | 3 |  |  |  |  |  |  |

Notes:
- 106: 培训内容与参加的人数有关，注意工时的估计

| ID | WBS | Task | Duration | Start | Finish | Predecessors | Baseline start | Baseline finish | Baseline duration | Total slack | Constraint | Resources | Work | Cost | Baseline cost | Text8 | Text21 | Text28 |
| --- | --- | --- | --- | --- | --- | --- | --- | --- | --- | --- | --- | --- | --- | --- | --- | --- | --- | --- |
| 132 | 1.8.4 | **需求功能矩阵建立** | 1d | 2004-05-27 | 2004-05-27 | 33 | 2004-05-14 | 2004-07-23 | 50.25d |  |  | 需求人员 | 425h | 130 | 44 | 与项目成员有关 | 需求功能矩阵表和变更表 |  |
| 133 | 1.8.4.1 | 需求阶段度量数据收集 | 7d | 2004-05-10 | 2004-05-18 |  | 2004-05-14 | 2004-05-14 | 0.25d | 62.96d | finish no earlier than 2004-05-18 | 项目经理 | 8h | 8 | 4 |  | 度量收集计划 |  |
| 134 | 1.8.4.2 | 需求里程碑报告 | 2d | 2004-05-21 | 2004-05-24 |  | 2004-05-21 | 2004-05-21 | 0.25d | 58.96d | finish no earlier than 2004-05-24 | 项目经理 | 8h | 8 | 4 |  | 项目阶段报告 |  |
| 135 | 1.8.4.3 | 设计阶段任务 | 46d | 2004-05-10 | 2004-07-12 |  | 2004-05-28 | 2004-05-28 | 0.25d | 23.96d | finish no earlier than 2004-07-12 |  | 301h |  | 4 |  |  |  |
| 136 | 1.8.4.4 | 需求培训 | 1d | 2004-05-10 | 2004-05-10 |  | 2004-06-04 | 2004-06-04 | 0.25d | 68.96d | start no earlier than 2004-05-10 | 需求人员 | 8h | 8 | 4 |  | 培训记录 |  |
| 137 | 1.8.4.5 | 系统测试用例设计 | 4d | 2004-05-20 | 2004-05-26 | 32 | 2004-06-11 | 2004-06-11 | 0.25d | 57.21d | finish no earlier than 2004-05-25 | 测试负责人 | 20h | 20 | 4 |  | 系统测试用例 |  |
| 138 | 1.8.4.6 | 系统测试方案编写 | 2d | 2004-05-20 | 2004-05-24 | 32 | 2004-06-18 | 2004-06-18 | 0.25d | 59.21d | finish no earlier than 2004-05-21 | 测试负责人 | 10h | 10 | 4 |  | 系统测试方案 |  |
| 139 | 1.8.4.7 | 系统测试用例同行评审 | 2d | 2004-05-25 | 2004-05-27 | 40 | 2004-06-25 | 2004-06-25 | 0.25d | 56.71d | finish no earlier than 2004-05-26 | 项目经理; 测试负责人 | 16h | 16 | 4 |  | 评审准备表和报告 |  |
| 140 | 1.8.4.8 | 系统测试用例返工 | 2d | 2004-05-26 | 2004-05-28 | 42 | 2004-07-02 | 2004-07-02 | 0.25d | 55.71d | finish no earlier than 2004-05-27 | 测试人员 | 8h | 9 | 4 |  |  |  |
| 141 | 1.8.4.9 | 概要设计1任务 | 2d | 2004-05-20 | 2004-05-24 | 32 | 2004-07-09 | 2004-07-09 | 0.25d | 59.21d | finish no earlier than 2004-05-21 | 测试人员; 设计人员 | 20h | 22 | 4 |  | 概要设计说明书 | 20 |
| 142 | 1.8.4.10 | 概要设计2任务 | 5d | 2004-05-24 | 2004-05-28 | 44 | 2004-07-16 | 2004-07-16 | 0.25d | 54.96d | finish no earlier than 2004-05-28 | 编码人员; 外部专家 | 10h | 12 | 4 |  |  | 23 |
| 143 | 1.8.4.11 | 概要设计同行评审 | 1d | 2004-05-28 | 2004-05-31 | 45 | 2004-07-23 | 2004-07-23 | 0.25d | 54.72d | finish no earlier than 2004-05-28 | 项目经理; 设计人员 | 8h | 9 | 4 |  | 评审准备表和报告 |  |
| 144 | 1.8.5 | **概要设计返工** | 2d | 2004-05-28 | 2004-05-31 | 46 | 2004-05-14 | 2004-07-23 | 50.25d |  |  | 设计人员 | 145h | 154 | 22 |  |  |  |
| 145 | 1.8.5.1 | 接口设计 | 2d | 2004-05-31 | 2004-06-02 | 47 | 2004-05-14 | 2004-05-14 | 0.25d | 52.22d | finish no earlier than 2004-06-01 | 设计人员 | 8h | 9 | 2 |  |  |  |
| 146 | 1.8.5.2 | 接口设计评审 | 2d | 2004-06-01 | 2004-06-03 | 48 | 2004-05-21 | 2004-05-21 | 0.25d | 51.22d | finish no earlier than 2004-06-02 | 项目经理; 设计人员 | 8h | 9 | 2 |  |  |  |
| 147 | 1.8.5.3 | 集成测试用例设计 | 3d | 2004-06-02 | 2004-06-07 | 49 | 2004-05-28 | 2004-05-28 | 0.25d | 49.72d | finish no earlier than 2004-06-04 | 测试人员 | 15h | 16 | 2 |  | 测试用例 |  |
| 148 | 1.8.5.4 | 集成测试用例项目评审 | 1d | 2004-06-04 | 2004-06-07 | 50 | 2004-06-04 | 2004-06-04 | 0.25d | 49.84d | finish no earlier than 2004-06-04 | 项目经理; 测试人员; 测试负责人 | 8h | 9 | 2 |  | 评审准备表和报告 |  |
| 149 | 1.8.5.5 | 集成测试用例返工 | 2d | 2004-06-04 | 2004-06-08 | 51 | 2004-06-11 | 2004-06-11 | 0.25d | 48.51d | finish no earlier than 2004-06-07 | 测试人员 | 8h | 9 | 2 |  |  |  |
| 150 | 1.8.5.6 | 详细设计1任务 | 3d | 2004-06-07 | 2004-06-10 | 52 | 2004-06-18 | 2004-06-18 | 0.25d | 46.51d | finish no earlier than 2004-06-09 | 设计人员 | 20h | 21 | 2 |  | 详细设计说明书 | 60 |
| 151 | 1.8.5.7 | 详细设计2任务 | 5d | 2004-06-09 | 2004-06-16 | 53 | 2004-06-25 | 2004-06-25 | 0.25d | 42.01d | finish no earlier than 2004-06-15 | 设计人员 | 30h | 31 | 2 |  |  | 68 |
| 152 | 1.8.5.8 | 详细设计走查 | 4d | 2004-06-14 | 2004-06-17 | 52, 53 | 2004-07-02 | 2004-07-02 | 0.25d | 40.96d | finish no earlier than 2004-06-17 | 项目经理 | 8h | 8 | 2 |  |  |  |
| 153 | 1.8.5.9 | 详细设计返工 | 1d | 2004-06-18 | 2004-06-18 | 55 | 2004-07-09 | 2004-07-09 | 0.25d | 39.96d | start no earlier than 2004-06-18 | 设计人员 | 8h | 9 | 2 |  |  |  |
| 154 | 1.8.5.10 | 设计阶段需求功能矩阵跟踪 | 1d | 2004-06-21 | 2004-06-21 | 56 | 2004-07-16 | 2004-07-16 | 0.25d | 38.96d | start no earlier than 2004-06-21 | 需求人员 | 8h | 8 | 2 |  | 需求功能矩阵变更表 |  |
| 155 | 1.8.5.11 | 设计阶段度量数据收集 | 1d | 2004-07-12 | 2004-07-12 | 57 | 2004-07-23 | 2004-07-23 | 0.25d | 23.96d | start no earlier than 2004-07-12 | 项目经理 | 8h | 8 | 2 |  | 度量收集计划 |  |
| 156 | 1.8.6 | 用户操作手册编写 | 0.94d? | 2004-05-20 | 2004-05-21 | 39 | 2004-07-01 | 2004-07-13 | 1d? | 59.96d | finish no earlier than 2004-05-21 | 项目经理 | 8h | 8 | 8 |  | 操作手册 |  |

| ID | WBS | Task | Duration | Start | Finish | Predecessors | Baseline start | Baseline finish | Baseline duration | Total slack | Constraint | Resources | Work | Cost | Baseline cost | Text21 | Text8 | Text28 | Text27 | Text29 |
| --- | --- | --- | --- | --- | --- | --- | --- | --- | --- | --- | --- | --- | --- | --- | --- | --- | --- | --- | --- | --- |
| 157 | 1.9 | **用户安装手册编写** | 3d | 2004-06-04 | 2004-06-08 | 47 | 2004-05-11 | 2004-08-10 | 65.77d? |  |  | 项目经理 | 1102h | 659 | 82 | 安装手册 |  |  |  |  |
| 158 | 1.9.1 | 用户维护手册编写 | 4d? | 2004-06-21 | 2004-06-24 | 56 | 2004-05-11 | 2004-05-11 | 0.5d? | 35.96d | finish no earlier than 2004-06-24 | 项目经理 | 8h | 8 | 4 | 维护手册 |  |  |  |  |
| 159 | 1.9.2 | **设计里程碑报告** | 10d | 2004-06-21 | 2004-07-02 | 56 | 2004-05-27 | 2004-08-09 | 51.98d? |  |  | 项目经理 | 497h | 213 | 19 | 里程碑报告 |  |  |  |  |
| 160 | 1.9.2.1 | 编码和单元测试任务 | 28d? | 2004-06-09 | 2004-07-16 |  | 2004-05-27 | 2004-05-28 | 0.25d? | 19.96d | finish no earlier than 2004-07-16 |  | 290h |  | 2 |  | 可能多次 |  |  |  |
| 161 | 1.9.2.2 | 设计培训 | 1d? | 2004-06-21 | 2004-06-21 | 56 | 2004-07-13 | 2004-07-14 | 0.25d? | 38.96d | start no earlier than 2004-06-21 | 设计人员 | 8h | 9 | 2 | 培训记录 |  |  |  |  |
| 162 | 1.9.2.3 | 编码培训 | 2d? | 2004-07-15 | 2004-07-16 | 64 | 2004-06-18 | 2004-06-18 | 0.25d? | 19.96d | finish no earlier than 2004-07-16 | 项目经理 | 8h | 8 | 2 | 培训记录 | 可能多次 |  |  |  |
| 163 | 1.9.2.4 | 单元测试用例设计 | 4d? | 2004-06-24 | 2004-06-30 | 53, 61 | 2004-06-18 | 2004-06-18 | 0.25d? | 32.75d | finish no earlier than 2004-06-29 | 测试人员 | 30h | 31 | 2 | 测试用例 | 可能多次 | 100 |  |  |
| 164 | 1.9.2.5 | 单元测试用例非正式评审 | 2d? | 2004-06-29 | 2004-07-01 | 66 | 2004-06-18 | 2004-06-21 | 0.25d? | 31d | finish no earlier than 2004-06-30 | 测试负责人 | 8h | 8 | 2 |  | 可能多次 |  |  |  |
| 165 | 1.9.2.6 | 单元测试用例返工 | 2d? | 2004-06-30 | 2004-07-02 | 67 | 2004-06-21 | 2004-06-21 | 0.25d? | 30d | finish no earlier than 2004-07-01 | 测试人员 | 8h | 9 | 2 |  | 可能多次 |  |  |  |
| 166 | 1.9.2.7 | 编码1任务 | 4d? | 2004-06-09 | 2004-06-15 | 53 | 2004-06-21 | 2004-06-21 | 0.25d? | 43.01d | finish no earlier than 2004-06-14 | 编码人员 | 20h | 21 | 2 | 编码1 | 可能多次 | 1000 | LOC |  |
| 167 | 1.9.2.8 | 编码2任务 | 3d? | 2004-06-14 | 2004-06-17 | 69 | 2004-06-21 | 2004-06-21 | 0.25d? | 41.51d | finish no earlier than 2004-06-16 | 编码人员 | 15h | 16 | 2 | 编码2 | 可能多次 | 700 | LOC |  |
| 168 | 1.9.2.9 | 编码3任务 | 5d? | 2004-06-16 | 2004-06-23 | 70 | 2004-08-09 | 2004-08-09 | 0.25d? | 37.64d | finish no earlier than 2004-06-22 | 编码人员 | 30h | 31 | 3 | 编码3 |  | 1300 | LOC |  |
| 169 | 1.9.3 | 编码4任务 | 3d? | 2004-06-22 | 2004-06-25 | 71 | 2004-08-09 | 2004-08-10 | 1d? | 35.89d | finish no earlier than 2004-06-24 | 编码人员 | 20h | 21 | 4 | 编码4 |  | 1100 | LOC |  |
| 170 | 1.9.4 | **编码走查** | 14d | 2004-06-21 | 2004-07-08 | 70 | 2004-05-27 | 2004-07-12 | 32.02d? |  |  | 项目经理 | 179h | 181 | 9 |  |  |  |  |  |
| 171 | 1.9.4.1 | 单元测试1 | 3d? | 2004-06-14 | 2004-06-17 | 69 | 2004-05-27 | 2004-05-28 | 0.38d? | 41.51d | finish no earlier than 2004-06-16 | 测试人员 | 20h | 21 | 3 | 测试记录 |  |  |  |  |
| 172 | 1.9.4.2 | 单元测试2 | 6d? | 2004-06-16 | 2004-06-24 | 74 | 2004-05-31 | 2004-06-01 | 0.25d? | 36.01d | finish no earlier than 2004-06-23 | 测试人员 | 35h | 36 | 2 | 测试记录 |  |  |  |  |
| 173 | 1.9.4.3 | 集成任务1 | 2d? | 2004-06-23 | 2004-06-25 | 75 | 2004-07-12 | 2004-07-12 | 0.5d? | 35.64d | finish no earlier than 2004-06-24 | 集成人员 | 12h | 12 | 4 | 集成报告 |  |  |  |  |
| 174 | 1.9.5 | 集成任务2 | 4d? | 2004-06-24 | 2004-06-30 | 76 | 2004-07-12 | 2004-07-13 | 1d? | 32.14d | finish no earlier than 2004-06-29 | 集成人员 | 20h | 20 | 2 | 集成报告 |  |  |  |  |
| 175 | 1.9.6 | **用户文档评审** | 8d | 2004-06-29 | 2004-07-08 | 77 | 2004-05-12 | 2004-07-21 | 51d |  |  | 项目经理 | 354h | 192 | 44 | 评审准备表和报告 |  |  |  |  |
| 176 | 1.9.6.1 | 用户文档返工 | 4d | 2004-07-08 | 2004-07-14 | 78 | 2004-05-12 | 2004-05-12 | 1d | 22.83d | finish no earlier than 2004-07-13 | 项目经理 | 8h | 8 | 4 |  |  |  |  |  |
| 177 | 1.9.6.2 | 单元测试编码返工 | 2d | 2004-06-23 | 2004-06-25 | 74, 75 | 2004-05-19 | 2004-05-19 | 1d | 35.64d | finish no earlier than 2004-06-24 | 编码人员 | 8h | 9 | 4 |  |  |  |  |  |
| 178 | 1.9.6.3 | 需求功能矩阵跟踪 | 2d | 2004-06-24 | 2004-06-28 | 80 | 2004-05-26 | 2004-05-26 | 1d | 34.64d | finish no earlier than 2004-06-25 | 需求人员 | 8h | 8 | 4 | 变更表 |  |  |  |  |
| 179 | 1.9.6.4 | 编码阶段度量数据收集 | 5d | 2004-07-05 | 2004-07-09 | 81 | 2004-06-02 | 2004-06-02 | 1d | 24.96d | finish no earlier than 2004-07-09 | 项目经理 | 8h | 8 | 4 | 度量收集计划 |  |  |  |  |
| 180 | 1.9.6.5 | 编码里程碑报告 | 2d | 2004-07-09 | 2004-07-13 | 82 | 2004-06-09 | 2004-06-09 | 1d | 23.08d | finish no earlier than 2004-07-12 | 项目经理 | 8h | 8 | 4 | 里程碑报告 |  |  |  |  |
| 181 | 1.9.6.6 | 测试阶段任务 | 23d | 2004-07-13 | 2004-08-12 |  | 2004-06-16 | 2004-06-16 | 1d | 0.96d | finish no earlier than 2004-08-12 |  | 166h |  | 4 |  |  |  |  |  |
| 182 | 1.9.6.7 | 集成测试培训 | 2d | 2004-07-13 | 2004-07-15 | 79 | 2004-06-23 | 2004-06-23 | 1d | 21.16d | finish no earlier than 2004-07-14 | 测试负责人 | 8h | 8 | 4 | 培训记录 |  |  |  |  |
| 183 | 1.9.6.8 | 集成测试任务 | 8d | 2004-07-14 | 2004-07-26 | 85 | 2004-06-30 | 2004-06-30 | 1d | 14.16d | finish no earlier than 2004-07-23 | 测试人员 | 50h | 51 | 4 |  |  |  |  | ܁ |
| 184 | 1.9.6.9 | 集成测试报告编写 | 2d | 2004-07-23 | 2004-07-27 | 86 | 2004-07-07 | 2004-07-07 | 1d | 13.91d | finish no earlier than 2004-07-26 | 测试人员 | 10h | 11 | 4 | 集成测试报告 |  |  |  | ܁ |
| 185 | 1.9.6.10 | 集成测试编码返工 | 2d | 2004-07-23 | 2004-07-27 | 86 | 2004-07-14 | 2004-07-14 | 1d | 13.91d | finish no earlier than 2004-07-26 | 编码人员 | 8h | 9 | 4 |  |  |  |  |  |
| 186 | 1.9.6.11 | 系统测试培训 | 2d | 2004-07-26 | 2004-07-28 | 88 | 2004-07-21 | 2004-07-21 | 1d | 12.91d | finish no earlier than 2004-07-27 | 测试负责人 | 8h | 8 | 4 | 培训记录 |  |  |  |  |

| ID | WBS | Task | Duration | Start | Finish | Predecessors | Baseline start | Baseline finish | Baseline duration | Total slack | Free slack | Constraint | Resources | Work | Cost | Baseline cost | Text29 | Text21 | Text8 |
| --- | --- | --- | --- | --- | --- | --- | --- | --- | --- | --- | --- | --- | --- | --- | --- | --- | --- | --- | --- |
| 187 | 1.10 | **系统测试任务** | 6d | 2004-07-27 | 2004-08-03 | 89 | 2004-05-11 | 2004-08-09 | 64.19d? |  |  |  | 测试人员 | 195h | 166 | 64 | ܁ |  |  |
| 188 | 1.10.1 | 系统测试报告编写 | 2d? | 2004-08-03 | 2004-08-05 | 90 | 2004-05-11 | 2004-05-12 | 1d? | 6.91d |  | finish no earlier than 2004-08-04 | 测试人员 | 10h | 11 | 4 | ܁ | 系统测试报告 |  |
| 189 | 1.10.2 | 系统测试编码返工 | 2d? | 2004-08-04 | 2004-08-06 | 91 | 2004-07-13 | 2004-07-14 | 0.5d? | 5.66d |  | finish no earlier than 2004-08-05 | 测试人员 | 8h | 9 | 2 |  |  |  |
| 190 | 1.10.3 | **测试阶段需求功能矩阵跟踪** | 2d | 2004-08-05 | 2004-08-06 | 92 | 2004-05-13 | 2004-07-15 | 45.96d |  |  |  | 需求人员 | 70h | 38 | 10 |  | 变更表 |  |
| 191 | 1.10.3.1 | 测试阶段度量数据收集 | 2d | 2004-08-06 | 2004-08-10 | 93 | 2004-05-13 | 2004-05-13 | 1d | 3.66d |  | finish no earlier than 2004-08-09 | 项目经理 | 8h | 8 | 1 | ܁$ | 度量收集计划 |  |
| 192 | 1.10.3.2 | 测试里程碑报告 | 2d | 2004-08-09 | 2004-08-11 | 94 | 2004-05-20 | 2004-05-20 | 0.96d | 2.66d |  | finish no earlier than 2004-08-10 | 项目经理 | 8h | 8 | 1 |  | 里程碑报告 |  |
| 193 | 1.10.3.3 | 用户体验 | 2d | 2004-08-10 | 2004-08-12 | 95 | 2004-05-27 | 2004-05-27 | 0.96d | 1.66d |  | finish no earlier than 2004-08-11 |  | 16h |  | 1 |  |  |  |
| 194 | 1.10.3.4 | 研发体验 | 2d | 2004-08-11 | 2004-08-13 | 96 | 2004-06-03 | 2004-06-03 | 0.96d | 0.66d |  | finish no earlier than 2004-08-12 |  | 16h |  | 1 |  |  |  |
| 195 | 1.10.3.5 | 配置项状态记录和发布 5 | 0.96d | 2004-06-10 | 2004-06-10 |  | 2004-06-10 | 2004-06-10 | 0.96d | 46d |  | start no earlier than 2004-06-10 | CM [13%] | 1h | 1 | 1 | ܁% |  |  |
| 196 | 1.10.3.6 | 配置项状态记录和发布 6 | 0.96d | 2004-06-17 | 2004-06-17 |  | 2004-06-17 | 2004-06-17 | 0.96d | 41d |  | start no earlier than 2004-06-17 | CM [13%] | 1h | 1 | 1 | ܁% |  |  |
| 197 | 1.10.3.7 | 配置项状态记录和发布 7 | 0.96d | 2004-06-24 | 2004-06-24 |  | 2004-06-24 | 2004-06-24 | 0.96d | 36d |  | start no earlier than 2004-06-24 | CM [13%] | 1h | 1 | 1 | ܁% |  |  |
| 198 | 1.10.3.8 | 配置项状态记录和发布 8 | 0.96d | 2004-07-01 | 2004-07-01 |  | 2004-07-01 | 2004-07-01 | 0.96d | 31d |  | start no earlier than 2004-07-01 | CM [13%] | 1h | 1 | 1 | ܁% |  |  |
| 199 | 1.10.3.9 | 配置项状态记录和发布 9 | 0.96d | 2004-07-08 | 2004-07-08 |  | 2004-07-08 | 2004-07-08 | 0.96d | 26d |  | start no earlier than 2004-07-08 | CM [13%] | 1h | 1 | 1 | ܁% |  |  |
| 200 | 1.10.3.10 | 配置项状态记录和发布 10 | 0.96d | 2004-07-15 | 2004-07-15 |  | 2004-07-15 | 2004-07-15 | 0.96d | 21d |  | start no earlier than 2004-07-15 | CM [13%] | 1h | 1 | 1 | ܁% |  |  |
| 201 | 1.10.4 | 配置物理审计 | 1d? | 2004-07-27 | 2004-07-27 | 70 | 2004-06-14 | 2004-06-15 | 1d? | -7d | 0d |  | CM [50%] | 4h | 4 | 4 | ܁% | 审计报告 | 每个项目至少2次 |
| 202 | 1.10.5 | 配置功能审计 | 1d? | 2004-07-27 | 2004-07-27 | 70 | 2004-06-14 | 2004-06-15 | 1d? | -7d | 0d |  | CM [50%] | 4h | 4 | 4 | ܁% | 审计报告 | 每个项目至少2次 |
| 203 | 1.10.6 | 配置审计问题跟踪 | 1d? | 2004-08-02 | 2004-08-13 | 201, 202 | 2004-06-18 | 2004-07-02 | 1d? | -7.96d | 0d |  | 项目经理 [25%] | 2h | 2 | 2 | ܁% |  |  |
| 204 | 1.10.7 | **配置变更控制** | 1d | 2004-07-27 | 2004-07-27 |  | 2004-05-13 | 2004-07-22 | 51d | 5d |  |  |  | 22h | 22 | 22 |  | 变更申请表和配置项变更表，配置状态记录 |  |
| 205 | 1.10.7.1 | 配置变更控制 1 | 1d | 2004-07-27 | 2004-07-27 |  | 2004-05-13 | 2004-05-13 | 1d | 5d |  | start no earlier than 2004-05-13 | CM [25%] | 2h | 2 | 2 | ܁% |  |  |
| 206 | 1.10.7.2 | 配置变更控制 2 | 1d | 2004-07-27 | 2004-07-27 |  | 2004-05-20 | 2004-05-20 | 1d | 5d |  | start no earlier than 2004-05-20 | CM [25%] | 2h | 2 | 2 | ܁% |  |  |
| 207 | 1.10.7.3 | 配置变更控制 3 | 1d | 2004-07-27 | 2004-07-27 |  | 2004-05-27 | 2004-05-27 | 1d | 5d |  | start no earlier than 2004-05-27 | CM [25%] | 2h | 2 | 2 | ܁% |  |  |
| 208 | 1.10.7.4 | 配置变更控制 4 | 1d | 2004-07-27 | 2004-07-27 |  | 2004-06-03 | 2004-06-03 | 1d | 5d |  | start no earlier than 2004-06-03 | CM [25%] | 2h | 2 | 2 | ܁% |  |  |
| 209 | 1.10.7.5 | 配置变更控制 5 | 1d | 2004-07-27 | 2004-07-27 |  | 2004-06-10 | 2004-06-10 | 1d | 5d |  | start no earlier than 2004-06-10 | CM [25%] | 2h | 2 | 2 | ܁% |  |  |
| 210 | 1.10.7.6 | 配置变更控制 6 | 1d | 2004-07-27 | 2004-07-27 |  | 2004-06-17 | 2004-06-17 | 1d | 5d |  | start no earlier than 2004-06-17 | CM [25%] | 2h | 2 | 2 | ܁% |  |  |
| 211 | 1.10.7.7 | 配置变更控制 7 | 1d | 2004-07-27 | 2004-07-27 |  | 2004-06-24 | 2004-06-24 | 1d | 5d |  | start no earlier than 2004-06-24 | CM [25%] | 2h | 2 | 2 | ܁% |  |  |
| 212 | 1.10.7.8 | 配置变更控制 8 | 1d | 2004-07-27 | 2004-07-27 |  | 2004-07-01 | 2004-07-01 | 1d | 5d |  | start no earlier than 2004-07-01 | CM [25%] | 2h | 2 | 2 | ܁% |  |  |
| 213 | 1.10.7.9 | 配置变更控制 9 | 1d | 2004-07-27 | 2004-07-27 |  | 2004-07-08 | 2004-07-08 | 1d | 5d |  | start no earlier than 2004-07-08 | CM [25%] | 2h | 2 | 2 | ܁% |  |  |
| 214 | 1.10.7.10 | 配置变更控制 10 | 1d | 2004-07-27 | 2004-07-27 |  | 2004-07-15 | 2004-07-15 | 1d | 5d |  | start no earlier than 2004-07-15 | CM [25%] | 2h | 2 | 2 | ܁% |  |  |
| 215 | 1.10.7.11 | 配置变更控制 11 | 1d | 2004-07-27 | 2004-07-27 |  | 2004-07-22 | 2004-07-22 | 1d | 5d |  | start no earlier than 2004-07-22 | CM [25%] | 2h | 2 | 2 | ܁% |  |  |
| 216 | 1.10.8 | 产品构造及发布1 | 2d? | 2004-07-27 | 2004-07-28 | 80 | 2004-06-22 | 2004-06-24 | 2d? | 4d |  |  | CM [25%] | 4h | 4 | 4 | ܁% | 软件产品和产品发布报告 |  |
| 217 | 1.10.9 | 产品构造及发布2 | 2d? | 2004-07-27 | 2004-07-28 | 88 | 2004-07-22 | 2004-07-26 | 2d? | 4d |  |  | CM [25%] | 4h | 4 | 4 | ܁% | 软件产品和产品发布报告 |  |
| 218 | 1.10.10 | 产品构造及发布3 | 4d? | 2004-08-05 | 2004-08-11 | 92 | 2004-08-03 | 2004-08-09 | 4d? | -5.3d | 0d |  | CM [25%] | 8h | 8 | 8 | ܁% | 软件产品和产品发布报告 |  |

| ID | WBS | Task | Duration | Start | Finish | Baseline start | Baseline finish | Baseline duration | Total slack | Constraint | Resources | Work | Cost | Text29 |
| --- | --- | --- | --- | --- | --- | --- | --- | --- | --- | --- | --- | --- | --- | --- |
| 219 | 1.10.11 | **配置库备份** | 1d | 2004-07-27 | 2004-07-27 | 2004-05-14 | 2004-07-23 | 51d | 5d |  |  | 11h | 11 |  |
| 220 | 1.10.11.1 | 配置库备份 1 | 1d | 2004-07-27 | 2004-07-27 | 2004-05-14 | 2004-05-14 | 1d | 5d | start no earlier than 2004-05-14 | CM [12.5%] | 1h | 1 | ܁% |
| 221 | 1.10.11.2 | 配置库备份 2 | 0.96d | 2004-07-27 | 2004-07-27 | 2004-05-21 | 2004-05-21 | 1d | 5.04d | start no earlier than 2004-05-21 | CM [13%] | 1h | 1 | ܁% |
| 222 | 1.10.11.3 | 配置库备份 3 | 0.96d | 2004-07-27 | 2004-07-27 | 2004-05-28 | 2004-05-28 | 1d | 5.04d | start no earlier than 2004-05-28 | CM [13%] | 1h | 1 | ܁% |
| 223 | 1.10.11.4 | 配置库备份 4 | 0.96d | 2004-07-27 | 2004-07-27 | 2004-06-04 | 2004-06-04 | 1d | 5.04d | start no earlier than 2004-06-04 | CM [13%] | 1h | 1 | ܁% |
| 224 | 1.10.11.5 | 配置库备份 5 | 0.96d | 2004-07-27 | 2004-07-27 | 2004-06-11 | 2004-06-11 | 1d | 5.04d | start no earlier than 2004-06-11 | CM [13%] | 1h | 1 | ܁% |
| 225 | 1.10.11.6 | 配置库备份 6 | 0.96d | 2004-07-27 | 2004-07-27 | 2004-06-18 | 2004-06-18 | 1d | 5.04d | start no earlier than 2004-06-18 | CM [13%] | 1h | 1 | ܁% |
| 226 | 1.10.11.7 | 配置库备份 7 | 0.96d | 2004-07-27 | 2004-07-27 | 2004-06-25 | 2004-06-25 | 1d | 5.04d | start no earlier than 2004-06-25 | CM [13%] | 1h | 1 | ܁% |
| 227 | 1.10.11.8 | 配置库备份 8 | 0.96d | 2004-07-27 | 2004-07-27 | 2004-07-02 | 2004-07-02 | 1d | 5.04d | start no earlier than 2004-07-02 | CM [13%] | 1h | 1 | ܁% |
| 228 | 1.10.11.9 | 配置库备份 9 | 0.96d | 2004-07-27 | 2004-07-27 | 2004-07-09 | 2004-07-09 | 1d | 5.04d | start no earlier than 2004-07-09 | CM [13%] | 1h | 1 | ܁% |
| 229 | 1.10.11.10 | 配置库备份 10 | 0.96d | 2004-07-27 | 2004-07-27 | 2004-07-16 | 2004-07-16 | 1d | 5.04d | start no earlier than 2004-07-16 | CM [13%] | 1h | 1 | ܁% |
| 230 | 1.10.11.11 | 配置库备份 11 | 0.96d | 2004-07-27 | 2004-07-27 | 2004-07-23 | 2004-07-23 | 1d | 5.04d | start no earlier than 2004-07-23 | CM [13%] | 1h | 1 | ܁% |
